# GRAO PARA

Schedule from MS Project XML, 2027-01-05 to 2027-09-06, status date 2027-01-10, A marks actual dates.
Placore
Gerado pelo app Gestão de Obra em 04/11/2026 16:18. Valor do HH: R$ 1.00/HH (taxa padrão de todos os recursos; Custo = HH x valor, para ponderar o avanço por HH).

## Calendars

- Calendário Grao Para (5 dias/sem, 8.0h/dia): Mon-Fri 08:00-12:00, 13:00-17:00; Sat-Sun off.

## Resources

| Resource | Rate |
| --- | --- |
| Ajudante/Servente | 1 |
| Armador | 1 |
| Carpinteiro | 1 |
| Operador De Maquina | 1 |
| Pedreiro | 1 |
| Rigger/Guindasteiro | 1 |
| Serralheiro/Montador | 1 |
| Servente | 1 |
| Soldados Industrial | 1 |

## Schedule

| ID | WBS | Task | Duration | Start | Finish | Predecessors | Complete | Resources | Work | ID App |
| --- | --- | --- | --- | --- | --- | --- | --- | --- | --- | --- |
| 1 | 1 | **Armazenagem De Grãos** |  |  |  |  |  |  |  |  |
| 2 | 1.1 | **Terraplanagem** |  |  |  |  |  |  |  |  |
| 3 | 1.1.1 | **Civil** |  |  |  |  |  |  |  |  |
| 4 | 1.1.1.1 | **Terraplanagem** |  |  |  |  |  |  |  |  |
| 5 | 1.1.1.1.1 | Limpeza De Camada Vegetal | 8d | 2027-01-06 A | 2027-01-15 |  | 31% | Operador De Maquina | 64h | 1 |
| 6 | 1.1.1.1.2 | Aterro Compactado De Solo 1Ra Categoria Com Uso De Motoniveladora, Caminhao Pipa E Rolo Pé De Carneiro | 174d | 2027-01-06 A | 2027-09-06 | 5 | 18% | Operador De Maquina [600%]; Servente [200%] | 11136h | 2 |
| 7 | 2 | **Caldeira** |  |  |  |  |  |  |  |  |
| 8 | 2.1 | **Terraplanagem** |  |  |  |  |  |  |  |  |
| 9 | 2.1.1 | **Civil** |  |  |  |  |  |  |  |  |
| 10 | 2.1.1.1 | **Terraplanagem** |  |  |  |  |  |  |  |  |
| 11 | 2.1.1.1.1 | Limpeza De Camada Vegetal | 1d | 2027-01-18 | 2027-01-18 | 5 |  | Operador De Maquina | 8h | 3 |
| 12 | 2.1.1.1.2 | Aterro Compactado De Solo 1Ra Categoria Com Uso De Motoniveladora, Caminhao Pipa E Rolo Pé De Carneiro | 70d | 2027-01-19 | 2027-04-26 | 11 |  | Operador De Maquina [300%]; Servente | 2240h | 4 |
| 13 | 3 | **Destilaria** |  |  |  |  |  |  |  |  |
| 14 | 3.1 | **Terraplanagem** |  |  |  |  |  |  |  |  |
| 15 | 3.1.1 | **Civil** |  |  |  |  |  |  |  |  |
| 16 | 3.1.1.1 | **Terraplanagem** |  |  |  |  |  |  |  |  |
| 17 | 3.1.1.1.1 | Limpeza De Camada Vegetal | 1d | 2027-01-19 | 2027-01-19 | 11 |  | Operador De Maquina | 8h | 5 |
| 18 | 3.1.1.1.2 | Corte E Trasporte De Solo De 1Ra Categoria | 28d | 2027-01-20 | 2027-02-26 | 17 |  | Operador De Maquina [1000%] | 2240h | 6 |
| 19 | 4 | **Armazem De Ddgs** |  |  |  |  |  |  |  |  |
| 20 | 4.1 | **Terraplanagem** |  |  |  |  |  |  |  |  |
| 21 | 4.1.1 | **Civil** |  |  |  |  |  |  |  |  |
| 22 | 4.1.1.1 | **Terraplanagem** |  |  |  |  |  |  |  |  |
| 23 | 4.1.1.1.1 | Corte E Trasporte De Solo De 1Ra Categoria | 11d | 2027-03-01 | 2027-03-15 | 18 |  | Operador De Maquina [500%] | 440h | 7 |
| 24 | 4.1.1.1.2 | Corte E Trasporte De Solo De 1Ra Categoria | 6d | 2027-03-16 | 2027-03-23 | 23 |  | Operador De Maquina [500%] | 240h | 8 |

Notes:
- 5: Quantidade: 63500.0 m2. Produção: 12000.0 m2/dia por equipe x 1 equipe(s). Duração = arred. p/ cima(63500.0 / (12000.0 x 1)) = 6 dia(s) útil(eis). Equipe básica por frente: Operador De Maquina 1. Executado: 20000.0 m2 (31.5%). Origem do índice: Catálogo de Etapas do app Gestão de Obra.
- 6: Quantidade: 300000.0 m3. Produção: 720.0 m3/dia por equipe x 2 equipe(s). Duração = arred. p/ cima(300000.0 / (720.0 x 2)) = 209 dia(s) útil(eis). Equipe básica por frente: Operador De Maquina 3, Servente 1. Executado: 55000.0 m3 (18.3%). Origem do índice: Catálogo de Etapas do app Gestão de Obra. ATENÇÃO: iniciada fora da sequência — início real anterior ao permitido pela(s) predecessora(s) #1.
- 11: Quantidade: 10000.0 m2. Produção: 12000.0 m2/dia por equipe x 1 equipe(s). Duração = arred. p/ cima(10000.0 / (12000.0 x 1)) = 1 dia(s) útil(eis). Equipe básica por frente: Operador De Maquina 1. Executado: 0.0 m2 (0.0%). Origem do índice: Catálogo de Etapas do app Gestão de Obra.
- 12: Quantidade: 50000.0 m3. Produção: 720.0 m3/dia por equipe x 1 equipe(s). Duração = arred. p/ cima(50000.0 / (720.0 x 1)) = 70 dia(s) útil(eis). Equipe básica por frente: Operador De Maquina 3, Servente 1. Executado: 0.0 m3 (0.0%). Origem do índice: Catálogo de Etapas do app Gestão de Obra.
- 17: Quantidade: 10000.0 m2. Produção: 12000.0 m2/dia por equipe x 1 equipe(s). Duração = arred. p/ cima(10000.0 / (12000.0 x 1)) = 1 dia(s) útil(eis). Equipe básica por frente: Operador De Maquina 1. Executado: 0.0 m2 (0.0%). Origem do índice: Catálogo de Etapas do app Gestão de Obra.
- 18: Quantidade: 50000.0 m3. Produção: 920.0 m3/dia por equipe x 2 equipe(s). Duração = arred. p/ cima(50000.0 / (920.0 x 2)) = 28 dia(s) útil(eis). Equipe básica por frente: Operador De Maquina 5. Executado: 0.0 m3 (0.0%). Origem do índice: Catálogo de Etapas do app Gestão de Obra.
- 23: Quantidade: 10000.0 m3. Produção: 920.0 m3/dia por equipe x 1 equipe(s). Duração = arred. p/ cima(10000.0 / (920.0 x 1)) = 11 dia(s) útil(eis). Equipe básica por frente: Operador De Maquina 5. Executado: 0.0 m3 (0.0%). Origem do índice: Catálogo de Etapas do app Gestão de Obra.
- 24: Quantidade: 5000.0 m3. Produção: 920.0 m3/dia por equipe x 1 equipe(s). Duração = arred. p/ cima(5000.0 / (920.0 x 1)) = 6 dia(s) útil(eis). Equipe básica por frente: Operador De Maquina 5. Executado: 0.0 m3 (0.0%). Origem do índice: Catálogo de Etapas do app Gestão de Obra.

| ID | WBS | Task | Duration | Start | Finish | Predecessors | Complete | Resources | Work | ID App |
| --- | --- | --- | --- | --- | --- | --- | --- | --- | --- | --- |
| 25 | 5 | **Áreas De Apoio** |  |  |  |  |  |  |  |  |
| 26 | 5.1 | **Portaria Principal** |  |  |  |  |  |  |  |  |
| 27 | 5.1.1 | **Civil** |  |  |  |  |  |  |  |  |
| 28 | 5.1.1.1 | **Terraplanagem** |  |  |  |  |  |  |  |  |
| 29 | 5.1.1.1.1 | Limpeza De Camada Vegetal | 3d | 2027-01-05 A | 2027-01-07 A |  | 100% | Operador De Maquina | 24h | 22 |
| 30 | 5.1.1.1.2 | Corte E Trasporte De Solo De 1Ra Categoria | 1d | 2027-01-08 A | 2027-01-08 A | 23, 29 | 100% | Operador De Maquina [500%] | 40h | 23 |
| 31 | 5.1.1.2 | **Serviços Preliminares** |  |  |  |  |  |  |  |  |
| 32 | 5.1.1.2.1 | Limpeza De Terreno | 1d | 2027-01-08 A | 2027-01-08 A | 30 | 100% | Pedreiro; Servente | 16h | 9 |
| 33 | 5.1.1.2.2 | Locação De Obra | 1d | 2027-01-08 A | 2027-01-08 A | 32 | 100% | Carpinteiro [200%]; Servente [200%] | 32h | 10 |
| 34 | 5.1.1.3 | **Infraestrutura** |  |  |  |  |  |  |  |  |
| 35 | 5.1.1.3.1 | Perfuração De Estacas Com Perfuratriz | 2d | 2027-01-08 A | 2027-01-11 | 33 | 83% | Operador De Maquina; Pedreiro; Servente [200%] | 64h | 11 |
| 36 | 5.1.1.3.2 | Corte E Dobra De Aço | 3d | 2027-01-08 A | 2027-01-12 | 32 | 50% | Armador; Servente | 48h | 12 |
| 37 | 5.1.1.3.3 | Montagem De Aço | 5d | 2027-01-08 A | 2027-01-14 | 36, 35 | 33% | Armador; Servente | 80h | 13 |
| 38 | 5.1.1.3.4 | Concretagem De Estaca | 1d | 2027-01-15 | 2027-01-15 | 37 |  | Pedreiro; Servente | 16h | 14 |
| 39 | 5.1.1.4 | **Superestrutura - Pre Moldados** |  |  |  |  |  |  |  |  |
| 40 | 5.1.1.4.1 | Fabricaçao De Pré Moldados | 14d | 2027-01-08 A | 2027-01-27 | 32 | 33% | Pedreiro [200%]; Armador [200%]; Servente [400%] | 896h | 15 |
| 41 | 5.1.1.4.2 | Montagem De Pilares Pré Moldados | 3d | 2027-01-28 | 2027-02-01 | 38, 40 |  | Pedreiro; Servente; Operador De Maquina | 72h | 16 |
| 42 | 5.1.1.4.3 | Montagem De Paredes E Vigas Pré Moldadas | 3d | 2027-02-02 | 2027-02-04 | 41 |  | Pedreiro; Servente; Operador De Maquina | 72h | 17 |
| 43 | 5.1.1.4.4 | Montagem De Laje Pré Moldada | 3d | 2027-02-05 | 2027-02-09 | 42 |  | Pedreiro [200%]; Servente [200%]; Operador De Maquina | 120h | 18 |
| 44 | 5.1.2 | **Mecânica** |  |  |  |  |  |  |  |  |
| 45 | 5.1.2.1 | **Cobertura Metalica** |  |  |  |  |  |  |  |  |
| 46 | 5.1.2.1.1 | Fabricação De Estrutura Metalica Para Cobertura Tipo Shed (Em Galpão/Oficina) | 12d | 2027-01-08 A | 2027-01-25 | 33 | 4% | Soldados Industrial [200%]; Serralheiro/Montador [200%]; Ajudante/Servente [400%] | 768h | 19 |
| 47 | 5.1.2.1.2 | Montagem E Içamento De Estrutura Metálica Shed No Canteiro | 16d | 2027-02-10 | 2027-03-03 | 33, 43 |  | Serralheiro/Montador [400%]; Ajudante/Servente [400%]; Rigger/Guindasteiro [200%] | 1280h | 20 |
| 48 | 5.1.2.1.3 | Acabamentos Da Cobertura Shed (Telhamento, Lanternim E Fechamentos Opostos) | 7d | 2027-03-04 | 2027-03-12 | 47 |  | Serralheiro/Montador [200%]; Ajudante/Servente [200%] | 224h | 21 |

Notes:
- 29: Quantidade: 200.0 m2. Produção: 12000.0 m2/dia por equipe x 1 equipe(s). Duração = arred. p/ cima(200.0 / (12000.0 x 1)) = 1 dia(s) útil(eis). Equipe básica por frente: Operador De Maquina 1. Executado: 200.0 m2 (100.0%). Origem do índice: Catálogo de Etapas do app Gestão de Obra.
- 30: Quantidade: 25.0 m3. Produção: 920.0 m3/dia por equipe x 1 equipe(s). Duração = arred. p/ cima(25.0 / (920.0 x 1)) = 1 dia(s) útil(eis). Equipe básica por frente: Operador De Maquina 5. Executado: 25.0 m3 (100.0%). Origem do índice: Catálogo de Etapas do app Gestão de Obra. ATENÇÃO: iniciada fora da sequência — início real anterior ao permitido pela(s) predecessora(s) #7.
- 32: Quantidade: 250.0 m2. Produção: 50.0 m2/dia por equipe x 1 equipe(s). Duração = arred. p/ cima(250.0 / (50.0 x 1)) = 5 dia(s) útil(eis). Equipe básica por frente: Pedreiro 1, Servente 1. Executado: 250.0 m2 (100.0%). Origem do índice: Catálogo de Etapas do app Gestão de Obra. ATENÇÃO: iniciada fora da sequência — início real anterior ao permitido pela(s) predecessora(s) #23.
- 33: Quantidade: 200.0 m2. Produção: 32.0 m2/dia por equipe x 2 equipe(s). Duração = arred. p/ cima(200.0 / (32.0 x 2)) = 4 dia(s) útil(eis). Equipe básica por frente: Carpinteiro 1, Servente 1. Executado: 200.0 m2 (100.0%). Origem do índice: Catálogo de Etapas do app Gestão de Obra. ATENÇÃO: iniciada fora da sequência — início real anterior ao permitido pela(s) predecessora(s) #9.
- 35: Quantidade: 60.0 m. Produção: 30.0 m/dia por equipe x 1 equipe(s). Duração = arred. p/ cima(60.0 / (30.0 x 1)) = 2 dia(s) útil(eis). Equipe básica por frente: Operador De Maquina 1, Pedreiro 1, Servente 2. Executado: 50.0 m (83.3%). Origem do índice: Catálogo de Etapas do app Gestão de Obra. ATENÇÃO: iniciada fora da sequência — início real anterior ao permitido pela(s) predecessora(s) #10.
- 36: Quantidade: 300.0 kg. Produção: 100.0 kg/dia por equipe x 1 equipe(s). Duração = arred. p/ cima(300.0 / (100.0 x 1)) = 3 dia(s) útil(eis). Equipe básica por frente: Armador 1, Servente 1. Executado: 150.0 kg (50.0%). Origem do índice: Catálogo de Etapas do app Gestão de Obra. ATENÇÃO: iniciada fora da sequência — início real anterior ao permitido pela(s) predecessora(s) #9.
- 37: Quantidade: 300.0 kg. Produção: 50.0 kg/dia por equipe x 1 equipe(s). Duração = arred. p/ cima(300.0 / (50.0 x 1)) = 6 dia(s) útil(eis). Equipe básica por frente: Armador 1, Servente 1. Executado: 100.0 kg (33.3%). Origem do índice: Catálogo de Etapas do app Gestão de Obra. ATENÇÃO: iniciada fora da sequência — início real anterior ao permitido pela(s) predecessora(s) #12, #11.
- 38: Quantidade: 7.5 m3. Produção: 50.0 m3/dia por equipe x 1 equipe(s). Duração = arred. p/ cima(7.5 / (50.0 x 1)) = 1 dia(s) útil(eis). Equipe básica por frente: Pedreiro 1, Servente 1. Executado: 0.0 m3 (0.0%). Origem do índice: Catálogo de Etapas do app Gestão de Obra.
- 40: Quantidade: 30.0 un. Produção: 0.8 un/dia por equipe x 2 equipe(s). Duração = arred. p/ cima(30.0 / (0.8 x 2)) = 19 dia(s) útil(eis). Equipe básica por frente: Pedreiro 1, Armador 1, Servente 2. Executado: 10.0 un (33.3%). Origem do índice: Catálogo de Etapas do app Gestão de Obra. ATENÇÃO: iniciada fora da sequência — início real anterior ao permitido pela(s) predecessora(s) #9.
- 41: Quantidade: 6.0 un. Produção: 2.0 un/dia por equipe x 1 equipe(s). Duração = arred. p/ cima(6.0 / (2.0 x 1)) = 3 dia(s) útil(eis). Equipe básica por frente: Pedreiro 1, Servente 1, Operador De Maquina 1. Executado: 0.0 un (0.0%). Origem do índice: Catálogo de Etapas do app Gestão de Obra.
- 42: Quantidade: 12.0 un. Produção: 4.0 un/dia por equipe x 1 equipe(s). Duração = arred. p/ cima(12.0 / (4.0 x 1)) = 3 dia(s) útil(eis). Equipe básica por frente: Pedreiro 1, Servente 1, Operador De Maquina 1. Executado: 0.0 un (0.0%). Origem do índice: Catálogo de Etapas do app Gestão de Obra.
- 43: Quantidade: 12.0 un. Produção: 5.0 un/dia por equipe x 1 equipe(s). Duração = arred. p/ cima(12.0 / (5.0 x 1)) = 3 dia(s) útil(eis). Equipe básica por frente: Pedreiro 2, Servente 2, Operador De Maquina 1. Executado: 0.0 un (0.0%). Origem do índice: Catálogo de Etapas do app Gestão de Obra.
- 46: Quantidade: 5000.0 kg. Produção: 240.0 kg/dia por equipe x 2 equipe(s). Duração = arred. p/ cima(5000.0 / (240.0 x 2)) = 11 dia(s) útil(eis). Equipe básica por frente: Soldados Industrial 1, Serralheiro/Montador 1, Ajudante/Servente 2. Executado: 200.0 kg (4.0%). Origem do índice: Catálogo de Etapas do app Gestão de Obra. ATENÇÃO: iniciada fora da sequência — início real anterior ao permitido pela(s) predecessora(s) #10.
- 47: Quantidade: 5000.0 kg. Produção: 160.0 kg/dia por equipe x 2 equipe(s). Duração = arred. p/ cima(5000.0 / (160.0 x 2)) = 16 dia(s) útil(eis). Equipe básica por frente: Serralheiro/Montador 2, Ajudante/Servente 2, Rigger/Guindasteiro 1. Executado: 0.0 kg (0.0%). Origem do índice: Catálogo de Etapas do app Gestão de Obra.
- 48: Quantidade: 200.0 m2. Produção: 16.0 m2/dia por equipe x 2 equipe(s). Duração = arred. p/ cima(200.0 / (16.0 x 2)) = 7 dia(s) útil(eis). Equipe básica por frente: Serralheiro/Montador 1, Ajudante/Servente 1. Executado: 0.0 m2 (0.0%). Origem do índice: Catálogo de Etapas do app Gestão de Obra.
