# VIAMARIS

Schedule from MS Project XML, 2025-12-01 to 2027-01-07, status date 2026-11-09, A marks actual dates.
Placore
Gerado pelo app Gestão de Obra em 09/11/2026 17:19. Valor do HH: R$ 1.00/HH (taxa padrão de todos os recursos; Custo = HH x valor, para ponderar o avanço por HH).

## Calendars

- Calendário Viamaris (5 dias/sem, 8.0h/dia): Mon-Fri 08:00-12:00, 13:00-17:00; Sat-Sun off.

## Resources

| Resource | Rate |
| --- | --- |
| Ajudante | 1 |
| Ajudante De Montador | 1 |
| Ajudante Eletricista | 1 |
| Ajudante Serralheiro/Montador | 1 |
| Armador | 1 |
| Carpinteiro | 1 |
| Eletricista | 1 |
| Eletricista Predial | 1 |
| Encanador Bombeiro | 1 |
| Montador De Estrutura/Telhador | 1 |
| Operador De Maquina | 1 |
| Pedreiro | 1 |
| Serralheiro/Montador | 1 |
| Servente | 1 |
| Soldador Industrial | 1 |
| Técnico Intrumentista | 1 |

## Schedule

| ID | WBS | Task | Duration | Start | Finish | Complete | Resources | Work | ID App |
| --- | --- | --- | --- | --- | --- | --- | --- | --- | --- |
| 1 | 1 | **Recebimento** |  |  |  |  |  |  |  |
| 2 | 1.1 | **Classificação** |  |  |  |  |  |  |  |
| 3 | 1.1.1 | **Civil** |  |  |  |  |  |  |  |
| 4 | 1.1.1.1 | **Serviços Preliminares** |  |  |  |  |  |  |  |
| 5 | 1.1.1.1.1 | Limpeza De Terreno | 13d | 2025-12-01 A | 2025-12-17 A | 100% | Pedreiro [200%]; Servente [200%] | 416h | 40 |
| 6 | 1.1.1.1.2 | Locação De Obra | 20d | 2025-12-01 A | 2025-12-26 A | 100% | Carpinteiro [200%]; Servente [200%] | 640h | 41 |
| 7 | 1.1.1.2 | **Infraestrutura** |  |  |  |  |  |  |  |
| 8 | 1.1.1.2.1 | Perfuração De Estaca Diametro De 800 Mm | 1d | 2025-12-01 A | 2025-12-01 A | 100% | Operador De Maquina; Servente [300%] | 32h | 9 |
| 9 | 1.1.1.2.2 | Corte E Dobra De Aço | 9d | 2025-12-01 A | 2025-12-11 A | 100% | Armador [200%]; Servente [200%] | 288h | 10 |
| 10 | 1.1.1.2.3 | Montagem De Aço | 17d | 2025-12-01 A | 2025-12-23 A | 100% | Armador [200%]; Servente [200%] | 544h | 11 |
| 11 | 1.1.1.2.4 | Concretagem De Estaca | 1d | 2025-12-01 A | 2025-12-01 A | 100% | Pedreiro; Servente | 16h | 12 |
| 12 | 1.1.1.3 | **Superestrutura - Pre Moldados** |  |  |  |  |  |  |  |
| 13 | 1.1.1.3.1 | Fabricaçao De Pré Moldados | 23d | 2025-12-01 A | 2025-12-31 A | 100% | Pedreiro [300%]; Armador [300%]; Servente [600%] | 2208h | 13 |
| 14 | 1.1.1.3.2 | Montagem De Pilares Pré Moldados | 14d | 2025-12-01 A | 2025-12-18 A | 100% | Pedreiro; Servente; Operador De Maquina | 336h | 14 |
| 15 | 1.1.1.3.3 | Montagem De Paredes E Vigas Pré Moldadas | 3d | 2025-12-01 A | 2025-12-03 A | 100% | Pedreiro; Servente; Operador De Maquina | 72h | 15 |
| 16 | 1.1.1.3.4 | Montagem De Laje Pré Moldada | 4d | 2025-12-01 A | 2025-12-04 A | 100% | Pedreiro [200%]; Servente [200%]; Operador De Maquina | 160h | 16 |
| 17 | 1.1.1.4 | **Alvenaria E Divisórias** |  |  |  |  |  |  |  |
| 18 | 1.1.1.4.1 | Alvenaria De Tijolo 15 Cm | 8d | 2025-12-01 A | 2025-12-10 A | 100% | Pedreiro [200%]; Servente [200%] | 256h | 21 |
| 19 | 1.1.1.4.2 | Chapisco Convencional | 248d | 2025-12-01 A | 2026-11-11 | 47% | Pedreiro [200%]; Servente [200%] | 7936h | 22 |
| 20 | 1.1.1.4.3 | Reboco / Massa Única | 11d | 2026-11-10 | 2026-11-24 |  | Pedreiro [200%]; Servente [200%] | 352h | 23 |
| 21 | 1.1.1.5 | **Instalações Hidraulicas** |  |  |  |  |  |  |  |
| 22 | 1.1.1.5.1 | Banheiro Simples Completo (Intalaçao Embutida Na Alvenaria) | 2d | 2026-11-10 | 2026-11-11 |  | Encanador Bombeiro [200%]; Servente [200%] | 64h | 42 |
| 23 | 1.1.1.5.2 | Instalação De Louças E Metais | 3d | 2026-11-10 | 2026-11-12 |  | Encanador Bombeiro; Servente | 48h | 43 |
| 24 | 1.1.1.6 | **Eletrica Predial** |  |  |  |  |  |  |  |
| 25 | 1.1.1.6.1 | Pug Completo (Infra + Fiação + Dispositivo) | 6d | 2026-11-10 | 2026-11-17 |  | Eletricista Predial; Ajudante Eletricista | 96h | 29 |
| 26 | 1.1.1.6.2 | Instalação De Caixa De Passagem Pré Moldade (40X40X40) Com Tampa | 1d | 2026-11-10 | 2026-11-10 |  | Pedreiro; Servente | 16h | 101 |
| 27 | 1.1.1.6.3 | Escavação De Vala, Assentamento De Eletroduto Flexível E Reaterro Compactado | 1d | 2026-11-10 | 2026-11-10 |  | Operador De Maquina; Pedreiro; Servente | 24h | 102 |

Notes:
- 5: Quantidade: 1250.0 m2. Produção: 50.0 m2/dia por equipe x 2 equipe(s). Duração = arred. p/ cima(1250.0 / (50.0 x 2)) = 13 dia(s) útil(eis). Equipe básica por frente: Pedreiro 1, Servente 1. Executado: 1250.0 m2 (100.0%). Origem do índice: Catálogo de Etapas do app Gestão de Obra.
- 6: Quantidade: 1250.0 m2. Produção: 32.0 m2/dia por equipe x 2 equipe(s). Duração = arred. p/ cima(1250.0 / (32.0 x 2)) = 20 dia(s) útil(eis). Equipe básica por frente: Carpinteiro 1, Servente 1. Executado: 1250.0 m2 (100.0%). Origem do índice: Catálogo de Etapas do app Gestão de Obra.
- 8: Quantidade: 50.0 m. Produção: 50.0 m/dia por equipe x 1 equipe(s). Duração = arred. p/ cima(50.0 / (50.0 x 1)) = 1 dia(s) útil(eis). Equipe básica por frente: Operador De Maquina 1, Servente 3. Executado: 50.0 m (100.0%). Origem do índice: Catálogo de Etapas do app Gestão de Obra.
- 9: Quantidade: 1692.0 kg. Produção: 100.0 kg/dia por equipe x 2 equipe(s). Duração = arred. p/ cima(1692.0 / (100.0 x 2)) = 9 dia(s) útil(eis). Equipe básica por frente: Armador 1, Servente 1. Executado: 1692.0 kg (100.0%). Origem do índice: Catálogo de Etapas do app Gestão de Obra.
- 10: Quantidade: 1692.0 kg. Produção: 50.0 kg/dia por equipe x 2 equipe(s). Duração = arred. p/ cima(1692.0 / (50.0 x 2)) = 17 dia(s) útil(eis). Equipe básica por frente: Armador 1, Servente 1. Executado: 1692.0 kg (100.0%). Origem do índice: Catálogo de Etapas do app Gestão de Obra.
- 11: Quantidade: 25.0 m3. Produção: 50.0 m3/dia por equipe x 1 equipe(s). Duração = arred. p/ cima(25.0 / (50.0 x 1)) = 1 dia(s) útil(eis). Equipe básica por frente: Pedreiro 1, Servente 1. Executado: 25.0 m3 (100.0%). Origem do índice: Catálogo de Etapas do app Gestão de Obra.
- 13: Quantidade: 54.0 un. Produção: 0.8 un/dia por equipe x 3 equipe(s). Duração = arred. p/ cima(54.0 / (0.8 x 3)) = 23 dia(s) útil(eis). Equipe básica por frente: Pedreiro 1, Armador 1, Servente 2. Executado: 54.0 un (100.0%). Origem do índice: Catálogo de Etapas do app Gestão de Obra.
- 14: Quantidade: 28.0 un. Produção: 2.0 un/dia por equipe x 1 equipe(s). Duração = arred. p/ cima(28.0 / (2.0 x 1)) = 14 dia(s) útil(eis). Equipe básica por frente: Pedreiro 1, Servente 1, Operador De Maquina 1. Executado: 28.0 un (100.0%). Origem do índice: Catálogo de Etapas do app Gestão de Obra.
- 15: Quantidade: 10.0 un. Produção: 4.0 un/dia por equipe x 1 equipe(s). Duração = arred. p/ cima(10.0 / (4.0 x 1)) = 3 dia(s) útil(eis). Equipe básica por frente: Pedreiro 1, Servente 1, Operador De Maquina 1. Executado: 10.0 un (100.0%). Origem do índice: Catálogo de Etapas do app Gestão de Obra.
- 16: Quantidade: 16.0 un. Produção: 5.0 un/dia por equipe x 1 equipe(s). Duração = arred. p/ cima(16.0 / (5.0 x 1)) = 4 dia(s) útil(eis). Equipe básica por frente: Pedreiro 2, Servente 2, Operador De Maquina 1. Executado: 16.0 un (100.0%). Origem do índice: Catálogo de Etapas do app Gestão de Obra.
- 18: Quantidade: 106.0 m2. Produção: 6.8 m2/dia por equipe x 2 equipe(s). Duração = arred. p/ cima(106.0 / (6.8 x 2)) = 8 dia(s) útil(eis). Equipe básica por frente: Pedreiro 1, Servente 1. Executado: 106.0 m2 (100.0%). Origem do índice: Catálogo de Etapas do app Gestão de Obra.
- 19: Quantidade: 212.0 m2. Produção: 64.0 m2/dia por equipe x 2 equipe(s). Duração = arred. p/ cima(212.0 / (64.0 x 2)) = 2 dia(s) útil(eis). Equipe básica por frente: Pedreiro 1, Servente 1. Executado: 100.0 m2 (47.2%). Origem do índice: Catálogo de Etapas do app Gestão de Obra.
- 20: Quantidade: 212.0 m2. Produção: 10.0 m2/dia por equipe x 2 equipe(s). Duração = arred. p/ cima(212.0 / (10.0 x 2)) = 11 dia(s) útil(eis). Equipe básica por frente: Pedreiro 1, Servente 1. Executado: 0.0 m2 (0.0%). Origem do índice: Catálogo de Etapas do app Gestão de Obra.
- 22: Quantidade: 1.0 un. Produção: 0.4 un/dia por equipe x 2 equipe(s). Duração = arred. p/ cima(1.0 / (0.4 x 2)) = 2 dia(s) útil(eis). Equipe básica por frente: Encanador Bombeiro 1, Servente 1. Executado: 0.0 un (0.0%). Origem do índice: Catálogo de Etapas do app Gestão de Obra.
- 23: Quantidade: 3.0 un. Produção: 1.28 un/dia por equipe x 1 equipe(s). Duração = arred. p/ cima(3.0 / (1.28 x 1)) = 3 dia(s) útil(eis). Equipe básica por frente: Encanador Bombeiro 1, Servente 1. Executado: 0.0 un (0.0%). Origem do índice: Catálogo de Etapas do app Gestão de Obra.
- 25: Quantidade: 30.0 un. Produção: 5.0 un/dia por equipe x 1 equipe(s). Duração = arred. p/ cima(30.0 / (5.0 x 1)) = 6 dia(s) útil(eis). Equipe básica por frente: Eletricista Predial 1, Ajudante Eletricista 1. Executado: 0.0 un (0.0%). Origem do índice: Catálogo de Etapas do app Gestão de Obra.
- 26: Quantidade: 2.0 un. Produção: 4.8 un/dia por equipe x 1 equipe(s). Duração = arred. p/ cima(2.0 / (4.8 x 1)) = 1 dia(s) útil(eis). Equipe básica por frente: Pedreiro 1, Servente 1. Executado: 0.0 un (0.0%). Origem do índice: Catálogo de Etapas do app Gestão de Obra.
- 27: Quantidade: 50.0 m. Produção: 50.0 m/dia por equipe x 1 equipe(s). Duração = arred. p/ cima(50.0 / (50.0 x 1)) = 1 dia(s) útil(eis). Equipe básica por frente: Operador De Maquina 1, Pedreiro 1, Servente 1. Executado: 0.0 m (0.0%). Origem do índice: Catálogo de Etapas do app Gestão de Obra.

| ID | WBS | Task | Duration | Start | Finish | Constraint | Resources | Work | ID App |
| --- | --- | --- | --- | --- | --- | --- | --- | --- | --- |
| 28 | 1.1.1.7 | **Cobetura Metalica** |  |  |  |  |  |  |  |
| 29 | 1.1.1.7.1 | Fabricação De Estrutura Metálica Para Cobertura | 29d | 2026-11-10 | 2026-12-18 |  | Soldador Industrial [300%]; Serralheiro/Montador [300%]; Ajudante Serralheiro/Montador [300%] | 2088h | 50 |
| 30 | 1.1.1.7.2 | Montagem De Estrutura Metalica Para Cobertura | 43d | 2026-11-10 | 2027-01-07 |  | Serralheiro/Montador [300%]; Ajudante Serralheiro/Montador [300%]; Operador De Maquina [300%] | 3096h | 51 |
| 31 | 1.1.1.7.3 | Montagem De Telha Metalica Para Cobertura | 17d | 2026-11-10 | 2026-12-02 |  | Serralheiro/Montador [300%]; Ajudante Serralheiro/Montador [300%] | 816h | 27 |
| 32 | 1.1.1.7.4 | Montagem De Telha Metálica Para Platibanda | 27d | 2026-11-10 | 2026-12-16 |  | Serralheiro/Montador [300%]; Ajudante Serralheiro/Montador [300%] | 1296h | 28 |
| 33 | 1.1.1.8 | **Forro** |  |  |  |  |  |  |  |
| 34 | 1.1.1.8.1 | Forro Com Telha Termoacustica | 7d | 2026-11-10 | 2026-11-18 |  | Montador De Estrutura/Telhador; Ajudante De Montador | 112h | 24 |
| 35 | 1.1.1.9 | **Esquadrias** |  |  |  |  |  |  |  |
| 36 | 1.1.1.9.1 | Instalação De Porta 1 Folha | 1d | 2026-11-10 | 2026-11-10 |  | Pedreiro; Servente | 16h | 30 |
| 37 | 1.1.1.9.2 | Instalação De Janela (M2) | 5d | 2026-11-10 | 2026-11-16 |  | Pedreiro; Servente | 80h | 31 |
| 38 | 1.1.1.10 | **Pisos Industriais** |  |  |  |  |  |  |  |
| 39 | 1.1.1.10.1 | Preparação De Sub Base, Instalação De Formas De Junta E Lona Plastica | 15d | 2026-11-10 | 2026-11-30 |  | Pedreiro [200%]; Servente [400%] | 720h | 17 |
| 40 | 1.1.1.10.2 | Posicionamento De Armação Em Tela Soldada Dupla | 11d | 2026-11-10 | 2026-11-24 |  | Armador [200%]; Servente [200%] | 352h | 18 |
| 41 | 1.1.1.10.3 | Concretagem, Lançamento E Reguagem | 27d | 2026-11-10 | 2026-12-16 |  | Pedreiro; Servente [200%] | 648h | 19 |
| 42 | 1.1.1.10.4 | Acabamento Mecanico Com Bailarina | 24d | 2026-11-10 | 2026-12-11 |  | Pedreiro; Servente | 384h | 20 |
| 43 | 1.1.1.10.5 | Execução De Calçada Externa 1 Metro | 15d | 2026-11-10 | 2026-11-30 |  | Pedreiro [200%]; Servente [200%] | 480h | 39 |
| 44 | 1.1.1.11 | **Estruturas Metálicas** |  |  |  |  |  |  |  |
| 45 | 1.1.1.11.1 | Fabricação De Estrutura Metálica Em Oficina/Galpão | 18d | 2026-11-10 | 2026-12-03 |  | Serralheiro/Montador [300%]; Soldador Industrial [300%]; Ajudante Serralheiro/Montador [300%] | 1296h | 48 |
| 46 | 1.1.1.11.2 | Montagem E Fixação De Estruturas Metalicas Em Canteiro (Passarelas/Escadas) | 9d | 2026-11-10 | 2026-11-20 |  | Montador De Estrutura/Telhador [300%]; Ajudante De Montador [300%]; Operador De Maquina [300%] | 648h | 49 |
| 47 | 1.1.1.11.3 | Fabricação E Instalação De Guarda Corpo Tubular Em Aço Carbono | 36d | 2026-11-10 | 2026-12-29 |  | Serralheiro/Montador [300%]; Montador De Estrutura/Telhador [300%]; Ajudante De Montador [300%] | 2592h | 47 |
| 48 | 1.1.2 | **Elétrica** |  |  |  |  |  |  |  |
| 49 | 1.1.2.1 | **Spda** |  |  |  |  |  |  |  |
| 50 | 1.1.2.1.1 | Escavação Mecanizada De Vala | 2d | 2026-11-10 | 2026-11-11 |  | Servente; Operador De Maquina | 32h | 32 |
| 51 | 1.1.2.1.2 | Cravação De Haste De Aterramento E Solda Exotermica | 1d | 2026-11-10 | 2026-11-10 |  | Eletricista; Servente | 16h | 34 |
| 52 | 1.1.2.1.3 | Lançamento De Cabo De Cobre Nu Em Vala | 4d | 2026-11-10 | 2026-11-13 |  | Eletricista; Servente | 64h | 35 |
| 53 | 1.1.2.1.4 | Condutor De Descida | 2d | 2026-11-10 | 2026-11-11 |  | Eletricista; Servente | 32h | 36 |
| 54 | 1.1.2.1.5 | Malha De Captação Média Em Cobertura | 11d | 2026-11-10 | 2026-11-24 | start no earlier than 2025-12-03 | Eletricista; Servente | 176h | 37 |
| 55 | 1.1.2.1.6 | Instalação De Mastro De Captador Franklin | 1d | 2026-11-10 | 2026-11-10 |  | Eletricista; Servente | 16h | 38 |

Notes:
- 29: Quantidade: 20602.0 kg. Produção: 240.0 kg/dia por equipe x 3 equipe(s). Duração = arred. p/ cima(20602.0 / (240.0 x 3)) = 29 dia(s) útil(eis). Equipe básica por frente: Soldador Industrial 1, Serralheiro/Montador 1, Ajudante Serralheiro/Montador 1. Executado: 0.0 kg (0.0%). Origem do índice: Catálogo de Etapas do app Gestão de Obra.
- 30: Quantidade: 20602.0 kg. Produção: 160.0 kg/dia por equipe x 3 equipe(s). Duração = arred. p/ cima(20602.0 / (160.0 x 3)) = 43 dia(s) útil(eis). Equipe básica por frente: Serralheiro/Montador 1, Ajudante Serralheiro/Montador 1, Operador De Maquina 1. Executado: 0.0 kg (0.0%). Origem do índice: Catálogo de Etapas do app Gestão de Obra.
- 31: Quantidade: 1165.0 m2. Produção: 24.0 m2/dia por equipe x 3 equipe(s). Duração = arred. p/ cima(1165.0 / (24.0 x 3)) = 17 dia(s) útil(eis). Equipe básica por frente: Serralheiro/Montador 1, Ajudante Serralheiro/Montador 1. Executado: 0.0 m2 (0.0%). Origem do índice: Catálogo de Etapas do app Gestão de Obra.
- 32: Quantidade: 1250.0 m2. Produção: 16.0 m2/dia por equipe x 3 equipe(s). Duração = arred. p/ cima(1250.0 / (16.0 x 3)) = 27 dia(s) útil(eis). Equipe básica por frente: Serralheiro/Montador 1, Ajudante Serralheiro/Montador 1. Executado: 0.0 m2 (0.0%). Origem do índice: Catálogo de Etapas do app Gestão de Obra.
- 34: Quantidade: 90.29 m2. Produção: 14.4 m2/dia por equipe x 1 equipe(s). Duração = arred. p/ cima(90.29 / (14.4 x 1)) = 7 dia(s) útil(eis). Equipe básica por frente: Montador De Estrutura/Telhador 1, Ajudante De Montador 1. Executado: 0.0 m2 (0.0%). Origem do índice: Catálogo de Etapas do app Gestão de Obra.
- 36: Quantidade: 2.0 un. Produção: 2.0 un/dia por equipe x 1 equipe(s). Duração = arred. p/ cima(2.0 / (2.0 x 1)) = 1 dia(s) útil(eis). Equipe básica por frente: Pedreiro 1, Servente 1. Executado: 0.0 un (0.0%). Origem do índice: Catálogo de Etapas do app Gestão de Obra.
- 37: Quantidade: 18.0 m2. Produção: 4.4 m2/dia por equipe x 1 equipe(s). Duração = arred. p/ cima(18.0 / (4.4 x 1)) = 5 dia(s) útil(eis). Equipe básica por frente: Pedreiro 1, Servente 1. Executado: 0.0 m2 (0.0%). Origem do índice: Catálogo de Etapas do app Gestão de Obra.
- 39: Quantidade: 1151.0 m2. Produção: 40.0 m2/dia por equipe x 2 equipe(s). Duração = arred. p/ cima(1151.0 / (40.0 x 2)) = 15 dia(s) útil(eis). Equipe básica por frente: Pedreiro 1, Servente 2. Executado: 0.0 m2 (0.0%). Origem do índice: Catálogo de Etapas do app Gestão de Obra.
- 40: Quantidade: 1151.0 m2. Produção: 56.0 m2/dia por equipe x 2 equipe(s). Duração = arred. p/ cima(1151.0 / (56.0 x 2)) = 11 dia(s) útil(eis). Equipe básica por frente: Armador 1, Servente 1. Executado: 0.0 m2 (0.0%). Origem do índice: Catálogo de Etapas do app Gestão de Obra.
- 41: Quantidade: 1151.0 m2. Produção: 44.0 m2/dia por equipe x 1 equipe(s). Duração = arred. p/ cima(1151.0 / (44.0 x 1)) = 27 dia(s) útil(eis). Equipe básica por frente: Pedreiro 1, Servente 2. Executado: 0.0 m2 (0.0%). Origem do índice: Catálogo de Etapas do app Gestão de Obra.
- 42: Quantidade: 1151.0 m2. Produção: 48.0 m2/dia por equipe x 1 equipe(s). Duração = arred. p/ cima(1151.0 / (48.0 x 1)) = 24 dia(s) útil(eis). Equipe básica por frente: Pedreiro 1, Servente 1. Executado: 0.0 m2 (0.0%). Origem do índice: Catálogo de Etapas do app Gestão de Obra.
- 43: Quantidade: 166.0 m. Produção: 5.6 m/dia por equipe x 2 equipe(s). Duração = arred. p/ cima(166.0 / (5.6 x 2)) = 15 dia(s) útil(eis). Equipe básica por frente: Pedreiro 1, Servente 1. Executado: 0.0 m (0.0%). Origem do índice: Catálogo de Etapas do app Gestão de Obra.
- 45: Quantidade: 15120.0 kg. Produção: 280.0 kg/dia por equipe x 3 equipe(s). Duração = arred. p/ cima(15120.0 / (280.0 x 3)) = 18 dia(s) útil(eis). Equipe básica por frente: Serralheiro/Montador 1, Soldador Industrial 1, Ajudante Serralheiro/Montador 1. Executado: 0.0 kg (0.0%). Origem do índice: Catálogo de Etapas do app Gestão de Obra.
- 46: Quantidade: 15120.0 kg. Produção: 560.0 kg/dia por equipe x 3 equipe(s). Duração = arred. p/ cima(15120.0 / (560.0 x 3)) = 9 dia(s) útil(eis). Equipe básica por frente: Montador De Estrutura/Telhador 1, Ajudante De Montador 1, Operador De Maquina 1. Executado: 0.0 kg (0.0%). Origem do índice: Catálogo de Etapas do app Gestão de Obra.
- 47: Quantidade: 432.0 m. Produção: 4.0 m/dia por equipe x 3 equipe(s). Duração = arred. p/ cima(432.0 / (4.0 x 3)) = 36 dia(s) útil(eis). Equipe básica por frente: Serralheiro/Montador 1, Montador De Estrutura/Telhador 1, Ajudante De Montador 1. Executado: 0.0 m (0.0%). Origem do índice: Catálogo de Etapas do app Gestão de Obra.
- 50: Quantidade: 166.0 m. Produção: 160.0 m/dia por equipe x 1 equipe(s). Duração = arred. p/ cima(166.0 / (160.0 x 1)) = 2 dia(s) útil(eis). Equipe básica por frente: Servente 1, Operador De Maquina 1. Executado: 0.0 m (0.0%). Origem do índice: Catálogo de Etapas do app Gestão de Obra.
- 51: Quantidade: 8.0 un. Produção: 8.0 un/dia por equipe x 1 equipe(s). Duração = arred. p/ cima(8.0 / (8.0 x 1)) = 1 dia(s) útil(eis). Equipe básica por frente: Eletricista 1, Servente 1. Executado: 0.0 un (0.0%). Origem do índice: Catálogo de Etapas do app Gestão de Obra.
- 52: Quantidade: 166.0 m. Produção: 50.0 m/dia por equipe x 1 equipe(s). Duração = arred. p/ cima(166.0 / (50.0 x 1)) = 4 dia(s) útil(eis). Equipe básica por frente: Eletricista 1, Servente 1. Executado: 0.0 m (0.0%). Origem do índice: Catálogo de Etapas do app Gestão de Obra.
- 53: Quantidade: 24.0 m. Produção: 16.0 m/dia por equipe x 1 equipe(s). Duração = arred. p/ cima(24.0 / (16.0 x 1)) = 2 dia(s) útil(eis). Equipe básica por frente: Eletricista 1, Servente 1. Executado: 0.0 m (0.0%). Origem do índice: Catálogo de Etapas do app Gestão de Obra.
- 54: Quantidade: 166.0 m. Produção: 16.0 m/dia por equipe x 1 equipe(s). Duração = arred. p/ cima(166.0 / (16.0 x 1)) = 11 dia(s) útil(eis). Equipe básica por frente: Eletricista 1, Servente 1. Executado: 0.0 m (0.0%). Origem do índice: Catálogo de Etapas do app Gestão de Obra.
- 55: Quantidade: 2.0 un. Produção: 2.4 un/dia por equipe x 1 equipe(s). Duração = arred. p/ cima(2.0 / (2.4 x 1)) = 1 dia(s) útil(eis). Equipe básica por frente: Eletricista 1, Servente 1. Executado: 0.0 un (0.0%). Origem do índice: Catálogo de Etapas do app Gestão de Obra.

| ID | WBS | Task | Duration | Start | Finish | Complete | Resources | Work | ID App |
| --- | --- | --- | --- | --- | --- | --- | --- | --- | --- |
| 56 | 1.2 | **Balança De Entrada** |  |  |  |  |  |  |  |
| 57 | 1.2.1 | **Civil** |  |  |  |  |  |  |  |
| 58 | 1.2.1.1 | **Serviços Preliminares** |  |  |  |  |  |  |  |
| 59 | 1.2.1.1.1 | Limpeza De Terreno | 4d | 2025-12-01 A | 2025-12-04 A | 100% | Pedreiro; Servente | 64h | 52 |
| 60 | 1.2.1.1.2 | Locação De Obra | 7d | 2025-12-01 A | 2025-12-09 A | 100% | Carpinteiro; Servente | 112h | 53 |
| 61 | 1.2.1.1.3 | Locação De Obra - Sala da Balança | 1d | 2025-12-01 A | 2025-12-01 A | 100% | Carpinteiro; Servente | 16h | 83 |
| 62 | 1.2.1.2 | **Infraestrutura** |  |  |  |  |  |  |  |
| 63 | 1.2.1.2.1 | Perfuração De Estacas Com Perfuratriz - Plataforma Balança | 7d | 2025-12-01 A | 2025-12-09 A | 100% | Operador De Maquina; Pedreiro; Servente [200%] | 224h | 54 |
| 64 | 1.2.1.2.2 | Corte E Dobra De Aço Para Estacas - Plaforma balança | 2d | 2025-12-01 A | 2025-12-02 A | 100% | Armador [200%]; Servente [200%] | 64h | 63 |
| 65 | 1.2.1.2.3 | Montagem De Aço Para Estacas | 6d | 2025-12-01 A | 2025-12-08 A | 100% | Armador [200%]; Servente [200%] | 192h | 64 |
| 66 | 1.2.1.2.4 | Concretagem De Estaca | 1d | 2025-12-01 A | 2025-12-01 A | 100% | Pedreiro; Servente | 16h | 57 |
| 67 | 1.2.1.2.5 | Arrasamento De Estacas (30 A 40 Cm) | 4d | 2025-12-01 A | 2025-12-04 A | 100% | Pedreiro [200%]; Servente [200%] | 128h | 58 |
| 68 | 1.2.1.2.6 | Escavação Manual 1Ra Cat Para Blocos De Concreto | 2d | 2025-12-01 A | 2025-12-02 A | 100% | Pedreiro; Servente [500%] | 96h | 65 |
| 69 | 1.2.1.2.7 | Corte E Dobra De Aço Para Blocos | 3d | 2025-12-01 A | 2025-12-03 A | 100% | Armador [200%]; Servente [200%] | 96h | 60 |
| 70 | 1.2.1.2.8 | Montagem De Aço Para Blocos | 6d | 2025-12-01 A | 2025-12-08 A | 100% | Armador [200%]; Servente [200%] | 192h | 61 |
| 71 | 1.2.1.2.9 | Concretagem De Blocos | 1d | 2025-12-01 A | 2025-12-01 A | 100% | Pedreiro; Servente | 16h | 62 |
| 72 | 1.2.1.2.10 | Escavação De Vigas Baldrames | 1d | 2025-12-01 A | 2025-12-01 A | 100% | Pedreiro; Servente [500%] | 48h | 66 |
| 73 | 1.2.1.2.11 | Corte E Dobra De Aço Para Vigas | 1d | 2025-12-01 A | 2025-12-01 A | 100% | Armador [200%]; Servente [200%] | 32h | 67 |
| 74 | 1.2.1.2.12 | Montagem De Aço Para Vigas | 1d | 2025-12-01 A | 2025-12-01 A | 100% | Armador [200%]; Servente [200%] | 32h | 68 |
| 75 | 1.2.1.2.13 | Concretagem De Vigas Baldrames | 1d | 2025-12-01 A | 2025-12-01 A | 100% | Pedreiro; Servente | 16h | 69 |
| 76 | 1.2.1.2.14 | Perfuração De Estacas Com Perfuratriz - Sala da balança | 1d | 2026-11-10 | 2026-11-10 |  | Operador De Maquina; Pedreiro; Servente [200%] | 32h | 84 |
| 77 | 1.2.1.2.15 | Corte E Dobra De Aço Para Estacas - Sala Balança | 1d | 2026-11-10 | 2026-11-10 |  | Armador; Servente | 16h | 85 |
| 78 | 1.2.1.2.16 | Montagem De Aço Para Estacas - Sala balança | 2d | 2026-11-10 | 2026-11-11 |  | Armador; Servente | 32h | 86 |
| 79 | 1.2.1.2.17 | Concretagem De Estaca - Sala Balança | 1d | 2026-11-10 | 2026-11-10 |  | Pedreiro; Servente | 16h | 87 |

Notes:
- 59: Quantidade: 200.0 m2. Produção: 50.0 m2/dia por equipe x 1 equipe(s). Duração = arred. p/ cima(200.0 / (50.0 x 1)) = 4 dia(s) útil(eis). Equipe básica por frente: Pedreiro 1, Servente 1. Executado: 200.0 m2 (100.0%). Origem do índice: Catálogo de Etapas do app Gestão de Obra.
- 60: Quantidade: 200.0 m2. Produção: 32.0 m2/dia por equipe x 1 equipe(s). Duração = arred. p/ cima(200.0 / (32.0 x 1)) = 7 dia(s) útil(eis). Equipe básica por frente: Carpinteiro 1, Servente 1. Executado: 200.0 m2 (100.0%). Origem do índice: Catálogo de Etapas do app Gestão de Obra.
- 61: Quantidade: 3.0 m2. Produção: 32.0 m2/dia por equipe x 1 equipe(s). Duração = arred. p/ cima(3.0 / (32.0 x 1)) = 1 dia(s) útil(eis). Equipe básica por frente: Carpinteiro 1, Servente 1. Executado: 3.0 m2 (100.0%). Origem do índice: Catálogo de Etapas do app Gestão de Obra.
- 63: Quantidade: 196.0 m. Produção: 30.0 m/dia por equipe x 1 equipe(s). Duração = arred. p/ cima(196.0 / (30.0 x 1)) = 7 dia(s) útil(eis). Equipe básica por frente: Operador De Maquina 1, Pedreiro 1, Servente 2. Executado: 196.0 m (100.0%). Origem do índice: Catálogo de Etapas do app Gestão de Obra.
- 64: Quantidade: 587.0 kg. Produção: 175.0 kg/dia por equipe x 2 equipe(s). Duração = arred. p/ cima(587.0 / (175.0 x 2)) = 2 dia(s) útil(eis). Equipe básica por frente: Armador 1, Servente 1. Executado: 587.0 kg (100.0%). Origem do índice: Catálogo de Etapas do app Gestão de Obra.
- 65: Quantidade: 587.0 kg. Produção: 50.0 kg/dia por equipe x 2 equipe(s). Duração = arred. p/ cima(587.0 / (50.0 x 2)) = 6 dia(s) útil(eis). Equipe básica por frente: Armador 1, Servente 1. Executado: 587.0 kg (100.0%). Origem do índice: Catálogo de Etapas do app Gestão de Obra.
- 66: Quantidade: 27.4 m3. Produção: 50.0 m3/dia por equipe x 1 equipe(s). Duração = arred. p/ cima(27.4 / (50.0 x 1)) = 1 dia(s) útil(eis). Equipe básica por frente: Pedreiro 1, Servente 1. Executado: 27.4 m3 (100.0%). Origem do índice: Catálogo de Etapas do app Gestão de Obra.
- 67: Quantidade: 28.0 un. Produção: 4.0 un/dia por equipe x 2 equipe(s). Duração = arred. p/ cima(28.0 / (4.0 x 2)) = 4 dia(s) útil(eis). Equipe básica por frente: Pedreiro 1, Servente 1. Executado: 28.0 un (100.0%). Origem do índice: Catálogo de Etapas do app Gestão de Obra.
- 68: Quantidade: 11.5 m3. Produção: 10.0 m3/dia por equipe x 1 equipe(s). Duração = arred. p/ cima(11.5 / (10.0 x 1)) = 2 dia(s) útil(eis). Equipe básica por frente: Pedreiro 1, Servente 5. Executado: 11.5 m3 (100.0%). Origem do índice: Catálogo de Etapas do app Gestão de Obra.
- 69: Quantidade: 555.0 kg. Produção: 100.0 kg/dia por equipe x 2 equipe(s). Duração = arred. p/ cima(555.0 / (100.0 x 2)) = 3 dia(s) útil(eis). Equipe básica por frente: Armador 1, Servente 1. Executado: 555.0 kg (100.0%). Origem do índice: Catálogo de Etapas do app Gestão de Obra.
- 70: Quantidade: 555.0 kg. Produção: 50.0 kg/dia por equipe x 2 equipe(s). Duração = arred. p/ cima(555.0 / (50.0 x 2)) = 6 dia(s) útil(eis). Equipe básica por frente: Armador 1, Servente 1. Executado: 555.0 kg (100.0%). Origem do índice: Catálogo de Etapas do app Gestão de Obra.
- 71: Quantidade: 11.27 m3. Produção: 60.0 m3/dia por equipe x 1 equipe(s). Duração = arred. p/ cima(11.27 / (60.0 x 1)) = 1 dia(s) útil(eis). Equipe básica por frente: Pedreiro 1, Servente 1. Executado: 11.27 m3 (100.0%). Origem do índice: Catálogo de Etapas do app Gestão de Obra.
- 72: Quantidade: 7.0 m3. Produção: 10.0 m3/dia por equipe x 1 equipe(s). Duração = arred. p/ cima(7.0 / (10.0 x 1)) = 1 dia(s) útil(eis). Equipe básica por frente: Pedreiro 1, Servente 5. Executado: 7.0 m3 (100.0%). Origem do índice: Catálogo de Etapas do app Gestão de Obra.
- 73: Quantidade: 70.0 kg. Produção: 100.0 kg/dia por equipe x 2 equipe(s). Duração = arred. p/ cima(70.0 / (100.0 x 2)) = 1 dia(s) útil(eis). Equipe básica por frente: Armador 1, Servente 1. Executado: 70.0 kg (100.0%). Origem do índice: Catálogo de Etapas do app Gestão de Obra.
- 74: Quantidade: 70.0 kg. Produção: 50.0 kg/dia por equipe x 2 equipe(s). Duração = arred. p/ cima(70.0 / (50.0 x 2)) = 1 dia(s) útil(eis). Equipe básica por frente: Armador 1, Servente 1. Executado: 70.0 kg (100.0%). Origem do índice: Catálogo de Etapas do app Gestão de Obra.
- 75: Quantidade: 7.0 m3. Produção: 60.0 m3/dia por equipe x 1 equipe(s). Duração = arred. p/ cima(7.0 / (60.0 x 1)) = 1 dia(s) útil(eis). Equipe básica por frente: Pedreiro 1, Servente 1. Executado: 7.0 m3 (100.0%). Origem do índice: Catálogo de Etapas do app Gestão de Obra.
- 76: Quantidade: 24.0 m. Produção: 30.0 m/dia por equipe x 1 equipe(s). Duração = arred. p/ cima(24.0 / (30.0 x 1)) = 1 dia(s) útil(eis). Equipe básica por frente: Operador De Maquina 1, Pedreiro 1, Servente 2. Executado: 0.0 m (0.0%). Origem do índice: Catálogo de Etapas do app Gestão de Obra.
- 77: Quantidade: 80.0 kg. Produção: 175.0 kg/dia por equipe x 1 equipe(s). Duração = arred. p/ cima(80.0 / (175.0 x 1)) = 1 dia(s) útil(eis). Equipe básica por frente: Armador 1, Servente 1. Executado: 0.0 kg (0.0%). Origem do índice: Catálogo de Etapas do app Gestão de Obra.
- 78: Quantidade: 80.0 kg. Produção: 50.0 kg/dia por equipe x 1 equipe(s). Duração = arred. p/ cima(80.0 / (50.0 x 1)) = 2 dia(s) útil(eis). Equipe básica por frente: Armador 1, Servente 1. Executado: 0.0 kg (0.0%). Origem do índice: Catálogo de Etapas do app Gestão de Obra.
- 79: Quantidade: 3.0 m3. Produção: 50.0 m3/dia por equipe x 1 equipe(s). Duração = arred. p/ cima(3.0 / (50.0 x 1)) = 1 dia(s) útil(eis). Equipe básica por frente: Pedreiro 1, Servente 1. Executado: 0.0 m3 (0.0%). Origem do índice: Catálogo de Etapas do app Gestão de Obra.

| ID | WBS | Task | Duration | Start | Finish | Complete | Resources | Work | ID App |
| --- | --- | --- | --- | --- | --- | --- | --- | --- | --- |
| 80 | 1.2.1.3 | **Superestrutura - Balança Rodoviária** |  |  |  |  |  |  |  |
| 81 | 1.2.1.3.1 | Fabricação E Colocação De Forma Para Laje De Balança De 30 Metros | 7d | 2025-12-01 A | 2025-12-09 A | 100% | Carpinteiro [200%]; Servente [200%] | 224h | 70 |
| 82 | 1.2.1.3.2 | Corte E Dobra De Aço Ca-50 | 8d | 2025-12-01 A | 2025-12-10 A | 100% | Armador [200%]; Servente [200%] | 256h | 71 |
| 83 | 1.2.1.3.3 | Montagem De Aço | 15d | 2025-12-01 A | 2025-12-19 A | 100% | Armador [200%]; Servente [200%] | 480h | 72 |
| 84 | 1.2.1.3.4 | Concretagem | 1d | 2025-12-01 A | 2025-12-01 A | 100% | Pedreiro; Servente | 16h | 73 |
| 85 | 1.2.1.3.5 | Desforma | 1d | 2026-11-10 | 2026-11-10 |  | Carpinteiro [200%]; Servente [200%] | 32h | 74 |
| 86 | 1.2.1.4 | **Superestrutura - Vigas** |  |  |  |  |  |  |  |
| 87 | 1.2.1.4.1 | Fabricaçãoe Montagem De Formas - Rampas de acesso | 10d | 2026-11-10 | 2026-11-23 |  | Carpinteiro [200%]; Servente [200%] | 320h | 75 |
| 88 | 1.2.1.4.2 | Corte E Dobra De Aço Ca-50 - Rampas de acesso | 5d | 2026-11-10 | 2026-11-16 |  | Armador [200%]; Servente [200%] | 160h | 77 |
| 89 | 1.2.1.4.3 | Montagem De Aço Ca-50 - Rampas de acesso | 9d | 2026-11-10 | 2026-11-20 |  | Armador [200%]; Servente [200%] | 288h | 78 |
| 90 | 1.2.1.5 | **Pisos Industriais** |  |  |  |  |  |  |  |
| 91 | 1.2.1.5.1 | Aterro Compactado Em Área Confinada - Rampas de acesso | 2d | 2026-11-10 | 2026-11-11 |  | Pedreiro; Servente | 32h | 76 |
| 92 | 1.2.1.5.2 | Preparação De Sub Base, Instalação De Formas De Junta E Lona Plastica - Rampas Balança | 2d | 2026-11-10 | 2026-11-11 |  | Pedreiro; Servente [200%] | 48h | 80 |
| 93 | 1.2.1.5.3 | Posicionamento De Armação Em Tela Soldada Dupla - Rampas Balança | 2d | 2026-11-10 | 2026-11-11 |  | Armador; Servente | 32h | 81 |
| 94 | 1.2.1.5.4 | Concretagem, Lançamento E Reguagem - Rampas Balança | 2d | 2026-11-10 | 2026-11-11 |  | Pedreiro; Servente [200%] | 48h | 82 |
| 95 | 1.2.1.6 | **Superestrutura - Pre Moldados** |  |  |  |  |  |  |  |
| 96 | 1.2.1.6.1 | Fabricaçao De Pré Moldados - Sala Balança | 22d | 2026-11-10 | 2026-12-09 |  | Pedreiro; Armador; Servente [200%] | 704h | 88 |
| 97 | 1.2.1.6.2 | Montagem De Pilares Pré Moldados - Sala Balança | 2d | 2026-11-10 | 2026-11-11 |  | Pedreiro; Servente; Operador De Maquina | 48h | 89 |
| 98 | 1.2.1.6.3 | Montagem De Paredes E Vigas Pré Moldadas - Sala Balança | 3d | 2026-11-10 | 2026-11-12 |  | Pedreiro; Servente; Operador De Maquina | 72h | 90 |
| 99 | 1.2.1.6.4 | Montagem De Laje Pré Moldada - Sala Balança | 1d | 2026-11-10 | 2026-11-10 |  | Pedreiro [200%]; Servente [200%]; Operador De Maquina | 40h | 91 |
| 100 | 1.2.1.7 | **Piso Predial** |  |  |  |  |  |  |  |
| 101 | 1.2.1.7.1 | Execução De Contrapiso - Sala Balança | 1d | 2026-11-10 | 2026-11-10 |  | Pedreiro; Servente | 16h | 92 |
| 102 | 1.2.1.7.2 | Aplicação De Piso Ceramico - Sala Balança | 1d | 2026-11-10 | 2026-11-10 |  | Pedreiro; Servente | 16h | 93 |
| 103 | 1.2.1.8 | **Forro** |  |  |  |  |  |  |  |
| 104 | 1.2.1.8.1 | Forro Com Telha Termoacustica - Sala Balança | 1d | 2026-11-10 | 2026-11-10 |  | Montador De Estrutura/Telhador; Ajudante De Montador | 16h | 94 |

Notes:
- 81: Quantidade: 1.0 un. Produção: 0.08 un/dia por equipe x 2 equipe(s). Duração = arred. p/ cima(1.0 / (0.08 x 2)) = 7 dia(s) útil(eis). Equipe básica por frente: Carpinteiro 1, Servente 1. Executado: 1.0 un (100.0%). Origem do índice: Catálogo de Etapas do app Gestão de Obra.
- 82: Quantidade: 1500.0 kg. Produção: 100.0 kg/dia por equipe x 2 equipe(s). Duração = arred. p/ cima(1500.0 / (100.0 x 2)) = 8 dia(s) útil(eis). Equipe básica por frente: Armador 1, Servente 1. Executado: 1500.0 kg (100.0%). Origem do índice: Catálogo de Etapas do app Gestão de Obra.
- 83: Quantidade: 1500.0 kg. Produção: 50.0 kg/dia por equipe x 2 equipe(s). Duração = arred. p/ cima(1500.0 / (50.0 x 2)) = 15 dia(s) útil(eis). Equipe básica por frente: Armador 1, Servente 1. Executado: 1500.0 kg (100.0%). Origem do índice: Catálogo de Etapas do app Gestão de Obra.
- 84: Quantidade: 15.0 m3. Produção: 60.0 m3/dia por equipe x 1 equipe(s). Duração = arred. p/ cima(15.0 / (60.0 x 1)) = 1 dia(s) útil(eis). Equipe básica por frente: Pedreiro 1, Servente 1. Executado: 15.0 m3 (100.0%). Origem do índice: Catálogo de Etapas do app Gestão de Obra.
- 85: Quantidade: 1.0 un. Produção: 0.5 un/dia por equipe x 2 equipe(s). Duração = arred. p/ cima(1.0 / (0.5 x 2)) = 1 dia(s) útil(eis). Equipe básica por frente: Carpinteiro 1, Servente 1. Executado: 0.0 un (0.0%). Origem do índice: Catálogo de Etapas do app Gestão de Obra.
- 87: Quantidade: 54.56 m2. Produção: 2.94 m2/dia por equipe x 2 equipe(s). Duração = arred. p/ cima(54.56 / (2.94 x 2)) = 10 dia(s) útil(eis). Equipe básica por frente: Carpinteiro 1, Servente 1. Executado: 0.0 m2 (0.0%). Origem do índice: Catálogo de Etapas do app Gestão de Obra.
- 88: Quantidade: 899.0 kg. Produção: 100.0 kg/dia por equipe x 2 equipe(s). Duração = arred. p/ cima(899.0 / (100.0 x 2)) = 5 dia(s) útil(eis). Equipe básica por frente: Armador 1, Servente 1. Executado: 0.0 kg (0.0%). Origem do índice: Catálogo de Etapas do app Gestão de Obra.
- 89: Quantidade: 857.0 kg. Produção: 50.0 kg/dia por equipe x 2 equipe(s). Duração = arred. p/ cima(857.0 / (50.0 x 2)) = 9 dia(s) útil(eis). Equipe básica por frente: Armador 1, Servente 1. Executado: 0.0 kg (0.0%). Origem do índice: Catálogo de Etapas do app Gestão de Obra.
- 91: Quantidade: 4.95 m3. Produção: 4.8 m3/dia por equipe x 1 equipe(s). Duração = arred. p/ cima(4.95 / (4.8 x 1)) = 2 dia(s) útil(eis). Equipe básica por frente: Pedreiro 1, Servente 1. Executado: 0.0 m3 (0.0%). Origem do índice: Catálogo de Etapas do app Gestão de Obra.
- 92: Quantidade: 60.8 m2. Produção: 40.0 m2/dia por equipe x 1 equipe(s). Duração = arred. p/ cima(60.8 / (40.0 x 1)) = 2 dia(s) útil(eis). Equipe básica por frente: Pedreiro 1, Servente 2. Executado: 0.0 m2 (0.0%). Origem do índice: Catálogo de Etapas do app Gestão de Obra.
- 93: Quantidade: 60.8 m2. Produção: 56.0 m2/dia por equipe x 1 equipe(s). Duração = arred. p/ cima(60.8 / (56.0 x 1)) = 2 dia(s) útil(eis). Equipe básica por frente: Armador 1, Servente 1. Executado: 0.0 m2 (0.0%). Origem do índice: Catálogo de Etapas do app Gestão de Obra.
- 94: Quantidade: 60.8 m2. Produção: 44.0 m2/dia por equipe x 1 equipe(s). Duração = arred. p/ cima(60.8 / (44.0 x 1)) = 2 dia(s) útil(eis). Equipe básica por frente: Pedreiro 1, Servente 2. Executado: 0.0 m2 (0.0%). Origem do índice: Catálogo de Etapas do app Gestão de Obra.
- 96: Quantidade: 17.0 un. Produção: 0.8 un/dia por equipe x 1 equipe(s). Duração = arred. p/ cima(17.0 / (0.8 x 1)) = 22 dia(s) útil(eis). Equipe básica por frente: Pedreiro 1, Armador 1, Servente 2. Executado: 0.0 un (0.0%). Origem do índice: Catálogo de Etapas do app Gestão de Obra.
- 97: Quantidade: 4.0 un. Produção: 2.0 un/dia por equipe x 1 equipe(s). Duração = arred. p/ cima(4.0 / (2.0 x 1)) = 2 dia(s) útil(eis). Equipe básica por frente: Pedreiro 1, Servente 1, Operador De Maquina 1. Executado: 0.0 un (0.0%). Origem do índice: Catálogo de Etapas do app Gestão de Obra.
- 98: Quantidade: 12.0 un. Produção: 4.0 un/dia por equipe x 1 equipe(s). Duração = arred. p/ cima(12.0 / (4.0 x 1)) = 3 dia(s) útil(eis). Equipe básica por frente: Pedreiro 1, Servente 1, Operador De Maquina 1. Executado: 0.0 un (0.0%). Origem do índice: Catálogo de Etapas do app Gestão de Obra.
- 99: Quantidade: 1.0 un. Produção: 5.0 un/dia por equipe x 1 equipe(s). Duração = arred. p/ cima(1.0 / (5.0 x 1)) = 1 dia(s) útil(eis). Equipe básica por frente: Pedreiro 2, Servente 2, Operador De Maquina 1. Executado: 0.0 un (0.0%). Origem do índice: Catálogo de Etapas do app Gestão de Obra.
- 101: Quantidade: 3.0 m2. Produção: 10.0 m2/dia por equipe x 1 equipe(s). Duração = arred. p/ cima(3.0 / (10.0 x 1)) = 1 dia(s) útil(eis). Equipe básica por frente: Pedreiro 1, Servente 1. Executado: 0.0 m2 (0.0%). Origem do índice: Catálogo de Etapas do app Gestão de Obra.
- 102: Quantidade: 3.0 m2. Produção: 8.0 m2/dia por equipe x 1 equipe(s). Duração = arred. p/ cima(3.0 / (8.0 x 1)) = 1 dia(s) útil(eis). Equipe básica por frente: Pedreiro 1, Servente 1. Executado: 0.0 m2 (0.0%). Origem do índice: Catálogo de Etapas do app Gestão de Obra.
- 104: Quantidade: 3.0 m2. Produção: 14.4 m2/dia por equipe x 1 equipe(s). Duração = arred. p/ cima(3.0 / (14.4 x 1)) = 1 dia(s) útil(eis). Equipe básica por frente: Montador De Estrutura/Telhador 1, Ajudante De Montador 1. Executado: 0.0 m2 (0.0%). Origem do índice: Catálogo de Etapas do app Gestão de Obra.

| ID | WBS | Task | Duration | Start | Finish | Resources | Work | ID App |
| --- | --- | --- | --- | --- | --- | --- | --- | --- |
| 105 | 1.2.1.9 | **Esquadrias** |  |  |  |  |  |  |
| 106 | 1.2.1.9.1 | Instalação De Porta 1 Folha - Sala Balança | 1d | 2026-11-10 | 2026-11-10 | Pedreiro; Servente | 16h | 95 |
| 107 | 1.2.1.10 | **Eletrica Predial** |  |  |  |  |  |  |
| 108 | 1.2.1.10.1 | Pug Completo (Infra + Fiação + Dispositivo) - Sala Balança | 2d | 2026-11-10 | 2026-11-11 | Eletricista Predial; Ajudante Eletricista | 32h | 100 |
| 109 | 1.2.1.10.2 | Instalação De Caixa De Passagem Pré Moldade (40X40X40) Com Tampa | 1d | 2026-11-10 | 2026-11-10 | Pedreiro; Servente | 16h | 103 |
| 110 | 1.2.2 | **Elétrica** |  |  |  |  |  |  |
| 111 | 1.2.2.1 | **Spda** |  |  |  |  |  |  |
| 112 | 1.2.2.1.1 | Escavação Mecanizada De Vala | 1d | 2026-11-10 | 2026-11-10 | Servente; Operador De Maquina | 16h | 97 |
| 113 | 1.2.2.1.2 | Lançamento De Cabo De Cobre Nu Em Vala | 2d | 2026-11-10 | 2026-11-11 | Eletricista; Servente | 32h | 98 |
| 114 | 1.2.2.1.3 | Cravação De Haste De Aterramento E Solda Exotermica | 1d | 2026-11-10 | 2026-11-10 | Eletricista; Servente | 16h | 99 |
| 115 | 1.2.3 | **Instrumentação** |  |  |  |  |  |  |
| 116 | 1.2.3.1 | **Instalação De Instrumentos** |  |  |  |  |  |  |
| 117 | 1.2.3.1.1 | Instalação De Instrumento De Campo De Pequeno/Médio Porte - Células de carga | 7d | 2026-11-10 | 2026-11-18 | Técnico Intrumentista; Ajudante | 112h | 104 |
| 118 | 1.3 | **Tombador** |  |  |  |  |  |  |
| 119 | 1.3.1 | **Civil** |  |  |  |  |  |  |
| 120 | 1.3.1.1 | **Serviços Preliminares** |  |  |  |  |  |  |
| 121 | 1.3.1.1.1 | Limpeza De Terreno | 14d | 2026-11-10 | 2026-11-27 | Pedreiro; Servente | 224h | 151 |
| 122 | 1.3.1.1.2 | Locação De Obra | 11d | 2026-11-10 | 2026-11-24 | Carpinteiro [200%]; Servente [200%] | 352h | 152 |
| 123 | 1.3.1.2 | **Infraestrutura** |  |  |  |  |  |  |
| 124 | 1.3.1.2.1 | Perfuração De Estacas Com Perfuratriz - Estacas Predio | 4d | 2026-11-10 | 2026-11-13 | Operador De Maquina; Pedreiro; Servente [200%] | 128h | 153 |
| 125 | 1.3.1.2.2 | Corte E Dobra De Aço Para Estacas - Estacas Prédio | 1d | 2026-11-10 | 2026-11-10 | Armador [300%]; Servente [300%] | 48h | 154 |
| 126 | 1.3.1.2.3 | Montagem De Aço Para Estacas - Estacas Prédio | 4d | 2026-11-10 | 2026-11-13 | Armador [300%]; Servente [300%] | 192h | 155 |
| 127 | 1.3.1.2.4 | Concretagem De Estaca - Estacas Predio | 1d | 2026-11-10 | 2026-11-10 | Pedreiro; Servente | 16h | 156 |
| 128 | 1.3.1.2.5 | Arrasamento De Estacas (30 A 40 Cm) - Estacas Predio | 6d | 2026-11-10 | 2026-11-17 | Pedreiro; Servente | 96h | 157 |
| 129 | 1.3.1.2.6 | Perfuração De Estacas Com Perfuratriz - Estacas Moega | 9d | 2026-11-10 | 2026-11-20 | Operador De Maquina; Pedreiro; Servente [200%] | 288h | 158 |
| 130 | 1.3.1.2.7 | Corte E Dobra De Aço Para Estacas - Estacas Moega | 1d | 2026-11-10 | 2026-11-10 | Armador [300%]; Servente [300%] | 48h | 159 |
| 131 | 1.3.1.2.8 | Montagem De Aço Para Estacas - Estacas Moega | 3d | 2026-11-10 | 2026-11-12 | Armador [300%]; Servente [300%] | 144h | 160 |
| 132 | 1.3.1.2.9 | Concretagem De Estaca - Estacas Moega | 1d | 2026-11-10 | 2026-11-10 | Pedreiro; Servente | 16h | 161 |
| 133 | 1.3.1.2.10 | Arrasamento De Estacas (30 A 40 Cm) - Estacas Moega | 3d | 2026-11-10 | 2026-11-12 | Pedreiro [300%]; Servente [300%] | 144h | 162 |
| 134 | 1.3.1.2.11 | Perfuração De Estacas Com Perfuratriz - Estacas Tombador | 4d | 2026-11-10 | 2026-11-13 | Operador De Maquina; Pedreiro; Servente [200%] | 128h | 163 |
| 135 | 1.3.1.2.12 | Corte E Dobra De Aço Para Estacas - Estacas Tombador | 1d | 2026-11-10 | 2026-11-10 | Armador [300%]; Servente [300%] | 48h | 164 |
| 136 | 1.3.1.2.13 | Montagem De Aço Para Estacas - Estacas Tombador | 2d | 2026-11-10 | 2026-11-11 | Armador; Servente | 32h | 165 |
| 137 | 1.3.1.2.14 | Concretagem De Estaca - Estacas Tombador | 1d | 2026-11-10 | 2026-11-10 | Pedreiro; Servente | 16h | 166 |
| 138 | 1.3.1.2.15 | Arrasamento De Estacas (30 A 40 Cm) - Estacas Tombador | 3d | 2026-11-10 | 2026-11-12 | Pedreiro; Servente | 48h | 167 |
| 139 | 1.3.1.2.16 | Corte E Dobra De Aço Para Blocos - blocos Predial | 3d | 2026-11-10 | 2026-11-12 | Armador [300%]; Servente [300%] | 144h | 169 |
| 140 | 1.3.1.2.17 | Montagem De Aço Para Blocos - Blocos predial | 6d | 2026-11-10 | 2026-11-17 | Armador [300%]; Servente [300%] | 288h | 170 |
| 141 | 1.3.1.2.18 | Concretagem De Blocos - Blocos Predial | 1d | 2026-11-10 | 2026-11-10 | Pedreiro; Servente | 16h | 171 |
| 142 | 1.3.1.2.19 | Corte E Dobra De Aço Para Blocos - Blocos Moega | 4d | 2026-11-10 | 2026-11-13 | Armador [300%]; Servente [300%] | 192h | 172 |
| 143 | 1.3.1.2.20 | Montagem De Aço Para Blocos - Blocos Moega | 7d | 2026-11-10 | 2026-11-18 | Armador [300%]; Servente [300%] | 336h | 173 |
| 144 | 1.3.1.2.21 | Concretagem De Blocos - Blocos moega | 1d | 2026-11-10 | 2026-11-10 | Pedreiro; Servente | 16h | 174 |
| 145 | 1.3.1.2.22 | Corte E Dobra De Aço Para Blocos - Blocos Tombador | 2d | 2026-11-10 | 2026-11-11 | Armador [300%]; Servente [300%] | 96h | 175 |
| 146 | 1.3.1.2.23 | Montagem De Aço Para Blocos - Blocos tombador | 3d | 2026-11-10 | 2026-11-12 | Armador [300%]; Servente [300%] | 144h | 176 |
| 147 | 1.3.1.2.24 | Concretagem De Blocos - Blocos Tombador | 1d | 2026-11-10 | 2026-11-10 | Pedreiro; Servente | 16h | 177 |
| 148 | 1.3.1.2.25 | Fabricação E Colocação De Formas Comum De Compensado - Formas Vigas Moega | 26d | 2026-11-10 | 2026-12-15 | Carpinteiro [300%]; Servente [300%] | 1248h | 178 |
| 149 | 1.3.1.2.26 | Corte E Dobra De Aço Para Vigas - Vigas Moega | 16d | 2026-11-10 | 2026-12-01 | Armador [300%]; Servente [300%] | 768h | 179 |
| 150 | 1.3.1.2.27 | Montagem De Aço Para Vigas - Vigas Moega | 31d | 2026-11-10 | 2026-12-22 | Armador [300%]; Servente [300%] | 1488h | 180 |
| 151 | 1.3.1.2.28 | Concretagem De Vigas Baldrames - Vigas Moega | 1d | 2026-11-10 | 2026-11-10 | Pedreiro; Servente | 16h | 181 |

Notes:
- 106: Quantidade: 1.0 un. Produção: 2.0 un/dia por equipe x 1 equipe(s). Duração = arred. p/ cima(1.0 / (2.0 x 1)) = 1 dia(s) útil(eis). Equipe básica por frente: Pedreiro 1, Servente 1. Executado: 0.0 un (0.0%). Origem do índice: Catálogo de Etapas do app Gestão de Obra.
- 108: Quantidade: 7.0 un. Produção: 5.0 un/dia por equipe x 1 equipe(s). Duração = arred. p/ cima(7.0 / (5.0 x 1)) = 2 dia(s) útil(eis). Equipe básica por frente: Eletricista Predial 1, Ajudante Eletricista 1. Executado: 0.0 un (0.0%). Origem do índice: Catálogo de Etapas do app Gestão de Obra.
- 109: Quantidade: 1.0 un. Produção: 4.8 un/dia por equipe x 1 equipe(s). Duração = arred. p/ cima(1.0 / (4.8 x 1)) = 1 dia(s) útil(eis). Equipe básica por frente: Pedreiro 1, Servente 1. Executado: 0.0 un (0.0%). Origem do índice: Catálogo de Etapas do app Gestão de Obra.
- 112: Quantidade: 74.0 m. Produção: 160.0 m/dia por equipe x 1 equipe(s). Duração = arred. p/ cima(74.0 / (160.0 x 1)) = 1 dia(s) útil(eis). Equipe básica por frente: Servente 1, Operador De Maquina 1. Executado: 0.0 m (0.0%). Origem do índice: Catálogo de Etapas do app Gestão de Obra.
- 113: Quantidade: 74.0 m. Produção: 50.0 m/dia por equipe x 1 equipe(s). Duração = arred. p/ cima(74.0 / (50.0 x 1)) = 2 dia(s) útil(eis). Equipe básica por frente: Eletricista 1, Servente 1. Executado: 0.0 m (0.0%). Origem do índice: Catálogo de Etapas do app Gestão de Obra.
- 114: Quantidade: 8.0 un. Produção: 8.0 un/dia por equipe x 1 equipe(s). Duração = arred. p/ cima(8.0 / (8.0 x 1)) = 1 dia(s) útil(eis). Equipe básica por frente: Eletricista 1, Servente 1. Executado: 0.0 un (0.0%). Origem do índice: Catálogo de Etapas do app Gestão de Obra.
- 117: Quantidade: 10.0 un. Produção: 1.6 un/dia por equipe x 1 equipe(s). Duração = arred. p/ cima(10.0 / (1.6 x 1)) = 7 dia(s) útil(eis). Equipe básica por frente: Técnico Intrumentista 1, Ajudante 1. Executado: 0.0 un (0.0%). Origem do índice: Catálogo de Etapas do app Gestão de Obra.
- 121: Quantidade: 700.0 m2. Produção: 50.0 m2/dia por equipe x 1 equipe(s). Duração = arred. p/ cima(700.0 / (50.0 x 1)) = 14 dia(s) útil(eis). Equipe básica por frente: Pedreiro 1, Servente 1. Executado: 0.0 m2 (0.0%). Origem do índice: Catálogo de Etapas do app Gestão de Obra.
- 122: Quantidade: 700.0 m2. Produção: 32.0 m2/dia por equipe x 2 equipe(s). Duração = arred. p/ cima(700.0 / (32.0 x 2)) = 11 dia(s) útil(eis). Equipe básica por frente: Carpinteiro 1, Servente 1. Executado: 0.0 m2 (0.0%). Origem do índice: Catálogo de Etapas do app Gestão de Obra.
- 124: Quantidade: 120.0 m. Produção: 30.0 m/dia por equipe x 1 equipe(s). Duração = arred. p/ cima(120.0 / (30.0 x 1)) = 4 dia(s) útil(eis). Equipe básica por frente: Operador De Maquina 1, Pedreiro 1, Servente 2. Executado: 0.0 m (0.0%). Origem do índice: Catálogo de Etapas do app Gestão de Obra.
- 125: Quantidade: 453.0 kg. Produção: 175.0 kg/dia por equipe x 3 equipe(s). Duração = arred. p/ cima(453.0 / (175.0 x 3)) = 1 dia(s) útil(eis). Equipe básica por frente: Armador 1, Servente 1. Executado: 0.0 kg (0.0%). Origem do índice: Catálogo de Etapas do app Gestão de Obra.
- 126: Quantidade: 453.0 kg. Produção: 50.0 kg/dia por equipe x 3 equipe(s). Duração = arred. p/ cima(453.0 / (50.0 x 3)) = 4 dia(s) útil(eis). Equipe básica por frente: Armador 1, Servente 1. Executado: 0.0 kg (0.0%). Origem do índice: Catálogo de Etapas do app Gestão de Obra.
- 127: Quantidade: 8.5 m3. Produção: 50.0 m3/dia por equipe x 1 equipe(s). Duração = arred. p/ cima(8.5 / (50.0 x 1)) = 1 dia(s) útil(eis). Equipe básica por frente: Pedreiro 1, Servente 1. Executado: 0.0 m3 (0.0%). Origem do índice: Catálogo de Etapas do app Gestão de Obra.
- 128: Quantidade: 24.0 un. Produção: 4.0 un/dia por equipe x 1 equipe(s). Duração = arred. p/ cima(24.0 / (4.0 x 1)) = 6 dia(s) útil(eis). Equipe básica por frente: Pedreiro 1, Servente 1. Executado: 0.0 un (0.0%). Origem do índice: Catálogo de Etapas do app Gestão de Obra.
- 129: Quantidade: 254.0 m. Produção: 30.0 m/dia por equipe x 1 equipe(s). Duração = arred. p/ cima(254.0 / (30.0 x 1)) = 9 dia(s) útil(eis). Equipe básica por frente: Operador De Maquina 1, Pedreiro 1, Servente 2. Executado: 0.0 m (0.0%). Origem do índice: Catálogo de Etapas do app Gestão de Obra.
- 130: Quantidade: 360.0 kg. Produção: 175.0 kg/dia por equipe x 3 equipe(s). Duração = arred. p/ cima(360.0 / (175.0 x 3)) = 1 dia(s) útil(eis). Equipe básica por frente: Armador 1, Servente 1. Executado: 0.0 kg (0.0%). Origem do índice: Catálogo de Etapas do app Gestão de Obra.
- 131: Quantidade: 360.0 kg. Produção: 50.0 kg/dia por equipe x 3 equipe(s). Duração = arred. p/ cima(360.0 / (50.0 x 3)) = 3 dia(s) útil(eis). Equipe básica por frente: Armador 1, Servente 1. Executado: 0.0 kg (0.0%). Origem do índice: Catálogo de Etapas do app Gestão de Obra.
- 132: Quantidade: 30.0 m3. Produção: 50.0 m3/dia por equipe x 1 equipe(s). Duração = arred. p/ cima(30.0 / (50.0 x 1)) = 1 dia(s) útil(eis). Equipe básica por frente: Pedreiro 1, Servente 1. Executado: 0.0 m3 (0.0%). Origem do índice: Catálogo de Etapas do app Gestão de Obra.
- 133: Quantidade: 28.0 un. Produção: 4.0 un/dia por equipe x 3 equipe(s). Duração = arred. p/ cima(28.0 / (4.0 x 3)) = 3 dia(s) útil(eis). Equipe básica por frente: Pedreiro 1, Servente 1. Executado: 0.0 un (0.0%). Origem do índice: Catálogo de Etapas do app Gestão de Obra.
- 134: Quantidade: 109.0 m. Produção: 30.0 m/dia por equipe x 1 equipe(s). Duração = arred. p/ cima(109.0 / (30.0 x 1)) = 4 dia(s) útil(eis). Equipe básica por frente: Operador De Maquina 1, Pedreiro 1, Servente 2. Executado: 0.0 m (0.0%). Origem do índice: Catálogo de Etapas do app Gestão de Obra.
- 135: Quantidade: 99.0 kg. Produção: 175.0 kg/dia por equipe x 3 equipe(s). Duração = arred. p/ cima(99.0 / (175.0 x 3)) = 1 dia(s) útil(eis). Equipe básica por frente: Armador 1, Servente 1. Executado: 0.0 kg (0.0%). Origem do índice: Catálogo de Etapas do app Gestão de Obra.
- 136: Quantidade: 99.0 kg. Produção: 50.0 kg/dia por equipe x 1 equipe(s). Duração = arred. p/ cima(99.0 / (50.0 x 1)) = 2 dia(s) útil(eis). Equipe básica por frente: Armador 1, Servente 1. Executado: 0.0 kg (0.0%). Origem do índice: Catálogo de Etapas do app Gestão de Obra.
- 137: Quantidade: 13.72 m3. Produção: 50.0 m3/dia por equipe x 1 equipe(s). Duração = arred. p/ cima(13.72 / (50.0 x 1)) = 1 dia(s) útil(eis). Equipe básica por frente: Pedreiro 1, Servente 1. Executado: 0.0 m3 (0.0%). Origem do índice: Catálogo de Etapas do app Gestão de Obra.
- 138: Quantidade: 12.0 un. Produção: 4.0 un/dia por equipe x 1 equipe(s). Duração = arred. p/ cima(12.0 / (4.0 x 1)) = 3 dia(s) útil(eis). Equipe básica por frente: Pedreiro 1, Servente 1. Executado: 0.0 un (0.0%). Origem do índice: Catálogo de Etapas do app Gestão de Obra.
- 139: Quantidade: 800.0 kg. Produção: 100.0 kg/dia por equipe x 3 equipe(s). Duração = arred. p/ cima(800.0 / (100.0 x 3)) = 3 dia(s) útil(eis). Equipe básica por frente: Armador 1, Servente 1. Executado: 0.0 kg (0.0%). Origem do índice: Catálogo de Etapas do app Gestão de Obra.
- 140: Quantidade: 800.0 kg. Produção: 50.0 kg/dia por equipe x 3 equipe(s). Duração = arred. p/ cima(800.0 / (50.0 x 3)) = 6 dia(s) útil(eis). Equipe básica por frente: Armador 1, Servente 1. Executado: 0.0 kg (0.0%). Origem do índice: Catálogo de Etapas do app Gestão de Obra.
- 141: Quantidade: 16.0 m3. Produção: 60.0 m3/dia por equipe x 1 equipe(s). Duração = arred. p/ cima(16.0 / (60.0 x 1)) = 1 dia(s) útil(eis). Equipe básica por frente: Pedreiro 1, Servente 1. Executado: 0.0 m3 (0.0%). Origem do índice: Catálogo de Etapas do app Gestão de Obra.
- 142: Quantidade: 1012.0 kg. Produção: 100.0 kg/dia por equipe x 3 equipe(s). Duração = arred. p/ cima(1012.0 / (100.0 x 3)) = 4 dia(s) útil(eis). Equipe básica por frente: Armador 1, Servente 1. Executado: 0.0 kg (0.0%). Origem do índice: Catálogo de Etapas do app Gestão de Obra.
- 143: Quantidade: 1012.0 kg. Produção: 50.0 kg/dia por equipe x 3 equipe(s). Duração = arred. p/ cima(1012.0 / (50.0 x 3)) = 7 dia(s) útil(eis). Equipe básica por frente: Armador 1, Servente 1. Executado: 0.0 kg (0.0%). Origem do índice: Catálogo de Etapas do app Gestão de Obra.
- 144: Quantidade: 7.7 m3. Produção: 60.0 m3/dia por equipe x 1 equipe(s). Duração = arred. p/ cima(7.7 / (60.0 x 1)) = 1 dia(s) útil(eis). Equipe básica por frente: Pedreiro 1, Servente 1. Executado: 0.0 m3 (0.0%). Origem do índice: Catálogo de Etapas do app Gestão de Obra.
- 145: Quantidade: 403.0 kg. Produção: 100.0 kg/dia por equipe x 3 equipe(s). Duração = arred. p/ cima(403.0 / (100.0 x 3)) = 2 dia(s) útil(eis). Equipe básica por frente: Armador 1, Servente 1. Executado: 0.0 kg (0.0%). Origem do índice: Catálogo de Etapas do app Gestão de Obra.
- 146: Quantidade: 403.0 kg. Produção: 50.0 kg/dia por equipe x 3 equipe(s). Duração = arred. p/ cima(403.0 / (50.0 x 3)) = 3 dia(s) útil(eis). Equipe básica por frente: Armador 1, Servente 1. Executado: 0.0 kg (0.0%). Origem do índice: Catálogo de Etapas do app Gestão de Obra.
- 147: Quantidade: 5.36 m3. Produção: 60.0 m3/dia por equipe x 1 equipe(s). Duração = arred. p/ cima(5.36 / (60.0 x 1)) = 1 dia(s) útil(eis). Equipe básica por frente: Pedreiro 1, Servente 1. Executado: 0.0 m3 (0.0%). Origem do índice: Catálogo de Etapas do app Gestão de Obra.
- 148: Quantidade: 229.0 m2. Produção: 2.94 m2/dia por equipe x 3 equipe(s). Duração = arred. p/ cima(229.0 / (2.94 x 3)) = 26 dia(s) útil(eis). Equipe básica por frente: Carpinteiro 1, Servente 1. Executado: 0.0 m2 (0.0%). Origem do índice: Catálogo de Etapas do app Gestão de Obra.
- 149: Quantidade: 4534.0 kg. Produção: 100.0 kg/dia por equipe x 3 equipe(s). Duração = arred. p/ cima(4534.0 / (100.0 x 3)) = 16 dia(s) útil(eis). Equipe básica por frente: Armador 1, Servente 1. Executado: 0.0 kg (0.0%). Origem do índice: Catálogo de Etapas do app Gestão de Obra.
- 150: Quantidade: 4534.0 kg. Produção: 50.0 kg/dia por equipe x 3 equipe(s). Duração = arred. p/ cima(4534.0 / (50.0 x 3)) = 31 dia(s) útil(eis). Equipe básica por frente: Armador 1, Servente 1. Executado: 0.0 kg (0.0%). Origem do índice: Catálogo de Etapas do app Gestão de Obra.
- 151: Quantidade: 33.0 m3. Produção: 60.0 m3/dia por equipe x 1 equipe(s). Duração = arred. p/ cima(33.0 / (60.0 x 1)) = 1 dia(s) útil(eis). Equipe básica por frente: Pedreiro 1, Servente 1. Executado: 0.0 m3 (0.0%). Origem do índice: Catálogo de Etapas do app Gestão de Obra.

| ID | WBS | Task | Duration | Start | Finish | Complete | Resources | Work | ID App |
| --- | --- | --- | --- | --- | --- | --- | --- | --- | --- |
| 152 | 1.3.1.3 | **Terraplanagem** |  |  |  |  |  |  |  |
| 153 | 1.3.1.3.1 | Corte E Trasporte De Solo De 1Ra Categoria - Corte moega e caixa tombador | 1d | 2026-11-10 | 2026-11-10 |  | Operador De Maquina [500%] | 40h | 168 |
| 154 | 1.3.1.4 | **Superestrutura - Pre Moldados** |  |  |  |  |  |  |  |
| 155 | 1.3.1.4.1 | Fabricaçao De Pré Moldados | 32d | 2026-11-10 | 2026-12-23 |  | Pedreiro [200%]; Armador [200%]; Servente [400%] | 2048h | 182 |
| 156 | 1.3.1.4.2 | Montagem De Pilares Pré Moldados | 9d | 2026-11-10 | 2026-11-20 |  | Pedreiro; Servente; Operador De Maquina | 216h | 183 |
| 157 | 1.3.1.4.3 | Montagem De Paredes E Vigas Pré Moldadas | 8d | 2026-11-10 | 2026-11-19 |  | Pedreiro; Servente; Operador De Maquina | 192h | 184 |
| 158 | 1.3.1.5 | **Pisos Industriais** |  |  |  |  |  |  |  |
| 159 | 1.3.1.5.1 | Preparação De Sub Base, Instalação De Formas De Junta E Lona Plastica - Piso Interno | 9d | 2026-11-10 | 2026-11-20 |  | Pedreiro [200%]; Servente [400%] | 432h | 185 |
| 160 | 1.3.1.5.2 | Posicionamento De Armação Em Tela Soldada Dupla - Piso interno | 7d | 2026-11-10 | 2026-11-18 |  | Armador [200%]; Servente [200%] | 224h | 186 |
| 161 | 1.3.1.5.3 | Concretagem, Lançamento E Reguagem - Piso interno | 8d | 2026-11-10 | 2026-11-19 |  | Pedreiro [200%]; Servente [400%] | 384h | 187 |
| 162 | 1.3.1.5.4 | Acabamento Mecanico Com Bailarina - Piso interno | 8d | 2026-11-10 | 2026-11-19 |  | Pedreiro [200%]; Servente [200%] | 256h | 189 |
| 163 | 1.3.1.5.5 | Execução De Calçada Externa 1 Metro | 8d | 2026-11-10 | 2026-11-19 |  | Pedreiro [200%]; Servente [200%] | 256h | 188 |
| 164 | 1.3.1.6 | **Cobetura Metalica** |  |  |  |  |  |  |  |
| 165 | 1.3.1.6.1 | Fabricação De Estrutura Metálica Para Cobertura | 27d | 2026-11-10 | 2026-12-16 |  | Soldador Industrial [400%]; Serralheiro/Montador [400%]; Ajudante Serralheiro/Montador [400%] | 2592h | 190 |
| 166 | 1.3.1.6.2 | Montagem De Estrutura Metalica Para Cobertura | 40d | 2026-11-10 | 2027-01-04 |  | Serralheiro/Montador [400%]; Ajudante Serralheiro/Montador [400%]; Operador De Maquina [400%] | 3840h | 191 |
| 167 | 1.3.1.6.3 | Montagem De Telha Metalica Para Cobertura | 11d | 2026-11-10 | 2026-11-24 |  | Serralheiro/Montador [400%]; Ajudante Serralheiro/Montador [400%] | 704h | 192 |
| 168 | 1.3.1.6.4 | Montagem De Telha Metálica Para Platibanda | 18d | 2026-11-10 | 2026-12-03 |  | Serralheiro/Montador [400%]; Ajudante Serralheiro/Montador [400%] | 1152h | 193 |
| 169 | 1.4 | **Balança De Saída** |  |  |  |  |  |  |  |
| 170 | 1.4.1 | **Civil** |  |  |  |  |  |  |  |
| 171 | 1.4.1.1 | **Serviços Preliminares** |  |  |  |  |  |  |  |
| 172 | 1.4.1.1.1 | Limpeza De Terreno | 4d | 2025-12-01 A | 2025-12-04 A | 100% | Pedreiro; Servente | 64h | 105 |
| 173 | 1.4.1.1.2 | Locação De Obra | 7d | 2025-12-01 A | 2025-12-09 A | 100% | Carpinteiro; Servente | 112h | 106 |
| 174 | 1.4.1.1.3 | Locação De Obra - Sala da Balança | 1d | 2025-12-01 A | 2025-12-01 A | 100% | Carpinteiro; Servente | 16h | 107 |
| 175 | 1.4.1.2 | **Infraestrutura** |  |  |  |  |  |  |  |
| 176 | 1.4.1.2.1 | Escavação Manual 1Ra Cat Para Blocos De Concreto - Radier | 2d | 2025-12-01 A | 2025-12-02 A | 100% | Pedreiro [200%]; Servente [1000%] | 192h | 113 |
| 177 | 1.4.1.2.2 | Corte E Dobra De Aço Para Blocos - Radier | 7d | 2025-12-01 A | 2025-12-09 A | 100% | Armador [200%]; Servente [200%] | 224h | 114 |
| 178 | 1.4.1.2.3 | Montagem De Aço Para Blocos - Radier | 13d | 2025-12-01 A | 2025-12-17 A | 100% | Armador [200%]; Servente [200%] | 416h | 115 |
| 179 | 1.4.1.2.4 | Concretagem De Blocos - Radier | 1d | 2025-12-01 A | 2025-12-01 A | 100% | Pedreiro; Servente | 16h | 116 |
| 180 | 1.4.1.2.5 | Escavação De Vigas Baldrames | 1d | 2025-12-01 A | 2025-12-01 A | 100% | Pedreiro; Servente [500%] | 48h | 117 |
| 181 | 1.4.1.2.6 | Corte E Dobra De Aço Para Vigas | 1d | 2025-12-01 A | 2025-12-01 A | 100% | Armador [200%]; Servente [200%] | 32h | 118 |
| 182 | 1.4.1.2.7 | Montagem De Aço Para Vigas | 1d | 2025-12-01 A | 2025-12-01 A | 100% | Armador [200%]; Servente [200%] | 32h | 119 |
| 183 | 1.4.1.2.8 | Concretagem De Vigas Baldrames | 1d | 2025-12-01 A | 2025-12-01 A | 100% | Pedreiro; Servente | 16h | 120 |
| 184 | 1.4.1.2.9 | Perfuração De Estacas Com Perfuratriz - Sala da balança | 1d | 2026-11-10 | 2026-11-10 |  | Operador De Maquina; Pedreiro; Servente [200%] | 32h | 121 |
| 185 | 1.4.1.2.10 | Corte E Dobra De Aço Para Estacas - Sala Balança | 1d | 2026-11-10 | 2026-11-10 |  | Armador; Servente | 16h | 122 |
| 186 | 1.4.1.2.11 | Montagem De Aço Para Estacas - Sala balança | 2d | 2026-11-10 | 2026-11-11 |  | Armador; Servente | 32h | 123 |
| 187 | 1.4.1.2.12 | Concretagem De Estaca - Sala Balança | 1d | 2026-11-10 | 2026-11-10 |  | Pedreiro; Servente | 16h | 124 |

Notes:
- 153: Quantidade: 106.0 m3. Produção: 920.0 m3/dia por equipe x 1 equipe(s). Duração = arred. p/ cima(106.0 / (920.0 x 1)) = 1 dia(s) útil(eis). Equipe básica por frente: Operador De Maquina 5. Executado: 0.0 m3 (0.0%). Origem do índice: Catálogo de Etapas do app Gestão de Obra.
- 155: Quantidade: 50.0 un. Produção: 0.8 un/dia por equipe x 2 equipe(s). Duração = arred. p/ cima(50.0 / (0.8 x 2)) = 32 dia(s) útil(eis). Equipe básica por frente: Pedreiro 1, Armador 1, Servente 2. Executado: 0.0 un (0.0%). Origem do índice: Catálogo de Etapas do app Gestão de Obra.
- 156: Quantidade: 18.0 un. Produção: 2.0 un/dia por equipe x 1 equipe(s). Duração = arred. p/ cima(18.0 / (2.0 x 1)) = 9 dia(s) útil(eis). Equipe básica por frente: Pedreiro 1, Servente 1, Operador De Maquina 1. Executado: 0.0 un (0.0%). Origem do índice: Catálogo de Etapas do app Gestão de Obra.
- 157: Quantidade: 32.0 un. Produção: 4.0 un/dia por equipe x 1 equipe(s). Duração = arred. p/ cima(32.0 / (4.0 x 1)) = 8 dia(s) útil(eis). Equipe básica por frente: Pedreiro 1, Servente 1, Operador De Maquina 1. Executado: 0.0 un (0.0%). Origem do índice: Catálogo de Etapas do app Gestão de Obra.
- 159: Quantidade: 680.0 m2. Produção: 40.0 m2/dia por equipe x 2 equipe(s). Duração = arred. p/ cima(680.0 / (40.0 x 2)) = 9 dia(s) útil(eis). Equipe básica por frente: Pedreiro 1, Servente 2. Executado: 0.0 m2 (0.0%). Origem do índice: Catálogo de Etapas do app Gestão de Obra.
- 160: Quantidade: 680.0 m2. Produção: 56.0 m2/dia por equipe x 2 equipe(s). Duração = arred. p/ cima(680.0 / (56.0 x 2)) = 7 dia(s) útil(eis). Equipe básica por frente: Armador 1, Servente 1. Executado: 0.0 m2 (0.0%). Origem do índice: Catálogo de Etapas do app Gestão de Obra.
- 161: Quantidade: 680.0 m2. Produção: 44.0 m2/dia por equipe x 2 equipe(s). Duração = arred. p/ cima(680.0 / (44.0 x 2)) = 8 dia(s) útil(eis). Equipe básica por frente: Pedreiro 1, Servente 2. Executado: 0.0 m2 (0.0%). Origem do índice: Catálogo de Etapas do app Gestão de Obra.
- 162: Quantidade: 680.0 m2. Produção: 48.0 m2/dia por equipe x 2 equipe(s). Duração = arred. p/ cima(680.0 / (48.0 x 2)) = 8 dia(s) útil(eis). Equipe básica por frente: Pedreiro 1, Servente 1. Executado: 0.0 m2 (0.0%). Origem do índice: Catálogo de Etapas do app Gestão de Obra.
- 163: Quantidade: 80.0 m. Produção: 5.6 m/dia por equipe x 2 equipe(s). Duração = arred. p/ cima(80.0 / (5.6 x 2)) = 8 dia(s) útil(eis). Equipe básica por frente: Pedreiro 1, Servente 1. Executado: 0.0 m (0.0%). Origem do índice: Catálogo de Etapas do app Gestão de Obra.
- 165: Quantidade: 25000.0 kg. Produção: 240.0 kg/dia por equipe x 4 equipe(s). Duração = arred. p/ cima(25000.0 / (240.0 x 4)) = 27 dia(s) útil(eis). Equipe básica por frente: Soldador Industrial 1, Serralheiro/Montador 1, Ajudante Serralheiro/Montador 1. Executado: 0.0 kg (0.0%). Origem do índice: Catálogo de Etapas do app Gestão de Obra.
- 166: Quantidade: 25000.0 kg. Produção: 160.0 kg/dia por equipe x 4 equipe(s). Duração = arred. p/ cima(25000.0 / (160.0 x 4)) = 40 dia(s) útil(eis). Equipe básica por frente: Serralheiro/Montador 1, Ajudante Serralheiro/Montador 1, Operador De Maquina 1. Executado: 0.0 kg (0.0%). Origem do índice: Catálogo de Etapas do app Gestão de Obra.
- 167: Quantidade: 1000.0 m2. Produção: 24.0 m2/dia por equipe x 4 equipe(s). Duração = arred. p/ cima(1000.0 / (24.0 x 4)) = 11 dia(s) útil(eis). Equipe básica por frente: Serralheiro/Montador 1, Ajudante Serralheiro/Montador 1. Executado: 0.0 m2 (0.0%). Origem do índice: Catálogo de Etapas do app Gestão de Obra.
- 168: Quantidade: 1100.0 m2. Produção: 16.0 m2/dia por equipe x 4 equipe(s). Duração = arred. p/ cima(1100.0 / (16.0 x 4)) = 18 dia(s) útil(eis). Equipe básica por frente: Serralheiro/Montador 1, Ajudante Serralheiro/Montador 1. Executado: 0.0 m2 (0.0%). Origem do índice: Catálogo de Etapas do app Gestão de Obra.
- 172: Quantidade: 200.0 m2. Produção: 50.0 m2/dia por equipe x 1 equipe(s). Duração = arred. p/ cima(200.0 / (50.0 x 1)) = 4 dia(s) útil(eis). Equipe básica por frente: Pedreiro 1, Servente 1. Executado: 200.0 m2 (100.0%). Origem do índice: Catálogo de Etapas do app Gestão de Obra.
- 173: Quantidade: 200.0 m2. Produção: 32.0 m2/dia por equipe x 1 equipe(s). Duração = arred. p/ cima(200.0 / (32.0 x 1)) = 7 dia(s) útil(eis). Equipe básica por frente: Carpinteiro 1, Servente 1. Executado: 200.0 m2 (100.0%). Origem do índice: Catálogo de Etapas do app Gestão de Obra.
- 174: Quantidade: 3.0 m2. Produção: 32.0 m2/dia por equipe x 1 equipe(s). Duração = arred. p/ cima(3.0 / (32.0 x 1)) = 1 dia(s) útil(eis). Equipe básica por frente: Carpinteiro 1, Servente 1. Executado: 3.0 m2 (100.0%). Origem do índice: Catálogo de Etapas do app Gestão de Obra.
- 176: Quantidade: 36.0 m3. Produção: 10.0 m3/dia por equipe x 2 equipe(s). Duração = arred. p/ cima(36.0 / (10.0 x 2)) = 2 dia(s) útil(eis). Equipe básica por frente: Pedreiro 1, Servente 5. Executado: 36.0 m3 (100.0%). Origem do índice: Catálogo de Etapas do app Gestão de Obra.
- 177: Quantidade: 1286.0 kg. Produção: 100.0 kg/dia por equipe x 2 equipe(s). Duração = arred. p/ cima(1286.0 / (100.0 x 2)) = 7 dia(s) útil(eis). Equipe básica por frente: Armador 1, Servente 1. Executado: 1286.0 kg (100.0%). Origem do índice: Catálogo de Etapas do app Gestão de Obra.
- 178: Quantidade: 1286.0 kg. Produção: 50.0 kg/dia por equipe x 2 equipe(s). Duração = arred. p/ cima(1286.0 / (50.0 x 2)) = 13 dia(s) útil(eis). Equipe básica por frente: Armador 1, Servente 1. Executado: 1286.0 kg (100.0%). Origem do índice: Catálogo de Etapas do app Gestão de Obra.
- 179: Quantidade: 36.0 m3. Produção: 60.0 m3/dia por equipe x 1 equipe(s). Duração = arred. p/ cima(36.0 / (60.0 x 1)) = 1 dia(s) útil(eis). Equipe básica por frente: Pedreiro 1, Servente 1. Executado: 36.0 m3 (100.0%). Origem do índice: Catálogo de Etapas do app Gestão de Obra.
- 180: Quantidade: 7.0 m3. Produção: 10.0 m3/dia por equipe x 1 equipe(s). Duração = arred. p/ cima(7.0 / (10.0 x 1)) = 1 dia(s) útil(eis). Equipe básica por frente: Pedreiro 1, Servente 5. Executado: 7.0 m3 (100.0%). Origem do índice: Catálogo de Etapas do app Gestão de Obra.
- 181: Quantidade: 70.0 kg. Produção: 100.0 kg/dia por equipe x 2 equipe(s). Duração = arred. p/ cima(70.0 / (100.0 x 2)) = 1 dia(s) útil(eis). Equipe básica por frente: Armador 1, Servente 1. Executado: 70.0 kg (100.0%). Origem do índice: Catálogo de Etapas do app Gestão de Obra.
- 182: Quantidade: 70.0 kg. Produção: 50.0 kg/dia por equipe x 2 equipe(s). Duração = arred. p/ cima(70.0 / (50.0 x 2)) = 1 dia(s) útil(eis). Equipe básica por frente: Armador 1, Servente 1. Executado: 70.0 kg (100.0%). Origem do índice: Catálogo de Etapas do app Gestão de Obra.
- 183: Quantidade: 7.0 m3. Produção: 60.0 m3/dia por equipe x 1 equipe(s). Duração = arred. p/ cima(7.0 / (60.0 x 1)) = 1 dia(s) útil(eis). Equipe básica por frente: Pedreiro 1, Servente 1. Executado: 7.0 m3 (100.0%). Origem do índice: Catálogo de Etapas do app Gestão de Obra.
- 184: Quantidade: 24.0 m. Produção: 30.0 m/dia por equipe x 1 equipe(s). Duração = arred. p/ cima(24.0 / (30.0 x 1)) = 1 dia(s) útil(eis). Equipe básica por frente: Operador De Maquina 1, Pedreiro 1, Servente 2. Executado: 0.0 m (0.0%). Origem do índice: Catálogo de Etapas do app Gestão de Obra.
- 185: Quantidade: 80.0 kg. Produção: 175.0 kg/dia por equipe x 1 equipe(s). Duração = arred. p/ cima(80.0 / (175.0 x 1)) = 1 dia(s) útil(eis). Equipe básica por frente: Armador 1, Servente 1. Executado: 0.0 kg (0.0%). Origem do índice: Catálogo de Etapas do app Gestão de Obra.
- 186: Quantidade: 80.0 kg. Produção: 50.0 kg/dia por equipe x 1 equipe(s). Duração = arred. p/ cima(80.0 / (50.0 x 1)) = 2 dia(s) útil(eis). Equipe básica por frente: Armador 1, Servente 1. Executado: 0.0 kg (0.0%). Origem do índice: Catálogo de Etapas do app Gestão de Obra.
- 187: Quantidade: 3.0 m3. Produção: 50.0 m3/dia por equipe x 1 equipe(s). Duração = arred. p/ cima(3.0 / (50.0 x 1)) = 1 dia(s) útil(eis). Equipe básica por frente: Pedreiro 1, Servente 1. Executado: 0.0 m3 (0.0%). Origem do índice: Catálogo de Etapas do app Gestão de Obra.

| ID | WBS | Task | Duration | Start | Finish | Complete | Resources | Work | ID App |
| --- | --- | --- | --- | --- | --- | --- | --- | --- | --- |
| 188 | 1.4.1.3 | **Superestrutura - Balança Rodoviária** |  |  |  |  |  |  |  |
| 189 | 1.4.1.3.1 | Fabricação E Colocação De Forma Para Laje De Balança De 30 Metros | 248d | 2025-12-01 A | 2026-11-11 | 80% | Carpinteiro [200%]; Servente [200%] | 7936h | 125 |
| 190 | 1.4.1.3.2 | Corte E Dobra De Aço Ca-50 | 8d | 2026-11-10 | 2026-11-19 |  | Armador [200%]; Servente [200%] | 256h | 126 |
| 191 | 1.4.1.3.3 | Montagem De Aço | 15d | 2026-11-10 | 2026-11-30 |  | Armador [200%]; Servente [200%] | 480h | 127 |
| 192 | 1.4.1.3.4 | Concretagem | 1d | 2026-11-10 | 2026-11-10 |  | Pedreiro; Servente | 16h | 128 |
| 193 | 1.4.1.3.5 | Desforma | 1d | 2026-11-10 | 2026-11-10 |  | Carpinteiro [200%]; Servente [200%] | 32h | 129 |
| 194 | 1.4.1.4 | **Superestrutura - Vigas** |  |  |  |  |  |  |  |
| 195 | 1.4.1.4.1 | Fabricaçãoe Montagem De Formas - Rampas de acesso | 10d | 2026-11-10 | 2026-11-23 |  | Carpinteiro [200%]; Servente [200%] | 320h | 130 |
| 196 | 1.4.1.4.2 | Corte E Dobra De Aço Ca-50 - Rampas de acesso | 5d | 2026-11-10 | 2026-11-16 |  | Armador [200%]; Servente [200%] | 160h | 131 |
| 197 | 1.4.1.4.3 | Montagem De Aço Ca-50 - Rampas de acesso | 9d | 2026-11-10 | 2026-11-20 |  | Armador [200%]; Servente [200%] | 288h | 132 |
| 198 | 1.4.1.5 | **Pisos Industriais** |  |  |  |  |  |  |  |
| 199 | 1.4.1.5.1 | Aterro Compactado Em Área Confinada - Rampas de acesso | 2d | 2026-11-10 | 2026-11-11 |  | Pedreiro; Servente | 32h | 133 |
| 200 | 1.4.1.5.2 | Preparação De Sub Base, Instalação De Formas De Junta E Lona Plastica - Rampas Balança | 2d | 2026-11-10 | 2026-11-11 |  | Pedreiro; Servente [200%] | 48h | 134 |
| 201 | 1.4.1.5.3 | Posicionamento De Armação Em Tela Soldada Dupla - Rampas Balança | 2d | 2026-11-10 | 2026-11-11 |  | Armador; Servente | 32h | 135 |
| 202 | 1.4.1.5.4 | Concretagem, Lançamento E Reguagem - Rampas Balança | 2d | 2026-11-10 | 2026-11-11 |  | Pedreiro; Servente [200%] | 48h | 136 |
| 203 | 1.4.1.6 | **Superestrutura - Pre Moldados** |  |  |  |  |  |  |  |
| 204 | 1.4.1.6.1 | Fabricaçao De Pré Moldados - Sala Balança | 22d | 2026-11-10 | 2026-12-09 |  | Pedreiro; Armador; Servente [200%] | 704h | 137 |
| 205 | 1.4.1.6.2 | Montagem De Pilares Pré Moldados - Sala Balança | 2d | 2026-11-10 | 2026-11-11 |  | Pedreiro; Servente; Operador De Maquina | 48h | 138 |
| 206 | 1.4.1.6.3 | Montagem De Paredes E Vigas Pré Moldadas - Sala Balança | 3d | 2026-11-10 | 2026-11-12 |  | Pedreiro; Servente; Operador De Maquina | 72h | 139 |
| 207 | 1.4.1.6.4 | Montagem De Laje Pré Moldada - Sala Balança | 1d | 2026-11-10 | 2026-11-10 |  | Pedreiro [200%]; Servente [200%]; Operador De Maquina | 40h | 140 |
| 208 | 1.4.1.7 | **Piso Predial** |  |  |  |  |  |  |  |
| 209 | 1.4.1.7.1 | Execução De Contrapiso - Sala Balança | 1d | 2026-11-10 | 2026-11-10 |  | Pedreiro; Servente | 16h | 141 |
| 210 | 1.4.1.7.2 | Aplicação De Piso Ceramico - Sala Balança | 1d | 2026-11-10 | 2026-11-10 |  | Pedreiro; Servente | 16h | 142 |
| 211 | 1.4.1.8 | **Forro** |  |  |  |  |  |  |  |
| 212 | 1.4.1.8.1 | Forro Com Telha Termoacustica - Sala Balança | 1d | 2026-11-10 | 2026-11-10 |  | Montador De Estrutura/Telhador; Ajudante De Montador | 16h | 143 |

Notes:
- 189: Quantidade: 1.0 un. Produção: 0.08 un/dia por equipe x 2 equipe(s). Duração = arred. p/ cima(1.0 / (0.08 x 2)) = 7 dia(s) útil(eis). Equipe básica por frente: Carpinteiro 1, Servente 1. Executado: 0.8 un (80.0%). Origem do índice: Catálogo de Etapas do app Gestão de Obra.
- 190: Quantidade: 1500.0 kg. Produção: 100.0 kg/dia por equipe x 2 equipe(s). Duração = arred. p/ cima(1500.0 / (100.0 x 2)) = 8 dia(s) útil(eis). Equipe básica por frente: Armador 1, Servente 1. Executado: 0.0 kg (0.0%). Origem do índice: Catálogo de Etapas do app Gestão de Obra.
- 191: Quantidade: 1500.0 kg. Produção: 50.0 kg/dia por equipe x 2 equipe(s). Duração = arred. p/ cima(1500.0 / (50.0 x 2)) = 15 dia(s) útil(eis). Equipe básica por frente: Armador 1, Servente 1. Executado: 0.0 kg (0.0%). Origem do índice: Catálogo de Etapas do app Gestão de Obra.
- 192: Quantidade: 15.0 m3. Produção: 60.0 m3/dia por equipe x 1 equipe(s). Duração = arred. p/ cima(15.0 / (60.0 x 1)) = 1 dia(s) útil(eis). Equipe básica por frente: Pedreiro 1, Servente 1. Executado: 0.0 m3 (0.0%). Origem do índice: Catálogo de Etapas do app Gestão de Obra.
- 193: Quantidade: 1.0 un. Produção: 0.5 un/dia por equipe x 2 equipe(s). Duração = arred. p/ cima(1.0 / (0.5 x 2)) = 1 dia(s) útil(eis). Equipe básica por frente: Carpinteiro 1, Servente 1. Executado: 0.0 un (0.0%). Origem do índice: Catálogo de Etapas do app Gestão de Obra.
- 195: Quantidade: 54.56 m2. Produção: 2.94 m2/dia por equipe x 2 equipe(s). Duração = arred. p/ cima(54.56 / (2.94 x 2)) = 10 dia(s) útil(eis). Equipe básica por frente: Carpinteiro 1, Servente 1. Executado: 0.0 m2 (0.0%). Origem do índice: Catálogo de Etapas do app Gestão de Obra.
- 196: Quantidade: 899.0 kg. Produção: 100.0 kg/dia por equipe x 2 equipe(s). Duração = arred. p/ cima(899.0 / (100.0 x 2)) = 5 dia(s) útil(eis). Equipe básica por frente: Armador 1, Servente 1. Executado: 0.0 kg (0.0%). Origem do índice: Catálogo de Etapas do app Gestão de Obra.
- 197: Quantidade: 857.0 kg. Produção: 50.0 kg/dia por equipe x 2 equipe(s). Duração = arred. p/ cima(857.0 / (50.0 x 2)) = 9 dia(s) útil(eis). Equipe básica por frente: Armador 1, Servente 1. Executado: 0.0 kg (0.0%). Origem do índice: Catálogo de Etapas do app Gestão de Obra.
- 199: Quantidade: 4.95 m3. Produção: 4.8 m3/dia por equipe x 1 equipe(s). Duração = arred. p/ cima(4.95 / (4.8 x 1)) = 2 dia(s) útil(eis). Equipe básica por frente: Pedreiro 1, Servente 1. Executado: 0.0 m3 (0.0%). Origem do índice: Catálogo de Etapas do app Gestão de Obra.
- 200: Quantidade: 60.8 m2. Produção: 40.0 m2/dia por equipe x 1 equipe(s). Duração = arred. p/ cima(60.8 / (40.0 x 1)) = 2 dia(s) útil(eis). Equipe básica por frente: Pedreiro 1, Servente 2. Executado: 0.0 m2 (0.0%). Origem do índice: Catálogo de Etapas do app Gestão de Obra.
- 201: Quantidade: 60.8 m2. Produção: 56.0 m2/dia por equipe x 1 equipe(s). Duração = arred. p/ cima(60.8 / (56.0 x 1)) = 2 dia(s) útil(eis). Equipe básica por frente: Armador 1, Servente 1. Executado: 0.0 m2 (0.0%). Origem do índice: Catálogo de Etapas do app Gestão de Obra.
- 202: Quantidade: 60.8 m2. Produção: 44.0 m2/dia por equipe x 1 equipe(s). Duração = arred. p/ cima(60.8 / (44.0 x 1)) = 2 dia(s) útil(eis). Equipe básica por frente: Pedreiro 1, Servente 2. Executado: 0.0 m2 (0.0%). Origem do índice: Catálogo de Etapas do app Gestão de Obra.
- 204: Quantidade: 17.0 un. Produção: 0.8 un/dia por equipe x 1 equipe(s). Duração = arred. p/ cima(17.0 / (0.8 x 1)) = 22 dia(s) útil(eis). Equipe básica por frente: Pedreiro 1, Armador 1, Servente 2. Executado: 0.0 un (0.0%). Origem do índice: Catálogo de Etapas do app Gestão de Obra.
- 205: Quantidade: 4.0 un. Produção: 2.0 un/dia por equipe x 1 equipe(s). Duração = arred. p/ cima(4.0 / (2.0 x 1)) = 2 dia(s) útil(eis). Equipe básica por frente: Pedreiro 1, Servente 1, Operador De Maquina 1. Executado: 0.0 un (0.0%). Origem do índice: Catálogo de Etapas do app Gestão de Obra.
- 206: Quantidade: 12.0 un. Produção: 4.0 un/dia por equipe x 1 equipe(s). Duração = arred. p/ cima(12.0 / (4.0 x 1)) = 3 dia(s) útil(eis). Equipe básica por frente: Pedreiro 1, Servente 1, Operador De Maquina 1. Executado: 0.0 un (0.0%). Origem do índice: Catálogo de Etapas do app Gestão de Obra.
- 207: Quantidade: 1.0 un. Produção: 5.0 un/dia por equipe x 1 equipe(s). Duração = arred. p/ cima(1.0 / (5.0 x 1)) = 1 dia(s) útil(eis). Equipe básica por frente: Pedreiro 2, Servente 2, Operador De Maquina 1. Executado: 0.0 un (0.0%). Origem do índice: Catálogo de Etapas do app Gestão de Obra.
- 209: Quantidade: 3.0 m2. Produção: 10.0 m2/dia por equipe x 1 equipe(s). Duração = arred. p/ cima(3.0 / (10.0 x 1)) = 1 dia(s) útil(eis). Equipe básica por frente: Pedreiro 1, Servente 1. Executado: 0.0 m2 (0.0%). Origem do índice: Catálogo de Etapas do app Gestão de Obra.
- 210: Quantidade: 3.0 m2. Produção: 8.0 m2/dia por equipe x 1 equipe(s). Duração = arred. p/ cima(3.0 / (8.0 x 1)) = 1 dia(s) útil(eis). Equipe básica por frente: Pedreiro 1, Servente 1. Executado: 0.0 m2 (0.0%). Origem do índice: Catálogo de Etapas do app Gestão de Obra.
- 212: Quantidade: 3.0 m2. Produção: 14.4 m2/dia por equipe x 1 equipe(s). Duração = arred. p/ cima(3.0 / (14.4 x 1)) = 1 dia(s) útil(eis). Equipe básica por frente: Montador De Estrutura/Telhador 1, Ajudante De Montador 1. Executado: 0.0 m2 (0.0%). Origem do índice: Catálogo de Etapas do app Gestão de Obra.

| ID | WBS | Task | Duration | Start | Finish | Predecessors | Complete | Resources | Work | ID App |
| --- | --- | --- | --- | --- | --- | --- | --- | --- | --- | --- |
| 213 | 1.4.1.9 | **Esquadrias** |  |  |  |  |  |  |  |  |
| 214 | 1.4.1.9.1 | Instalação De Porta 1 Folha - Sala Balança | 1d | 2026-11-10 | 2026-11-10 |  |  | Pedreiro; Servente | 16h | 144 |
| 215 | 1.4.1.10 | **Eletrica Predial** |  |  |  |  |  |  |  |  |
| 216 | 1.4.1.10.1 | Pug Completo (Infra + Fiação + Dispositivo) - Sala Balança | 2d | 2026-11-10 | 2026-11-11 |  |  | Eletricista Predial; Ajudante Eletricista | 32h | 145 |
| 217 | 1.4.1.10.2 | Instalação De Caixa De Passagem Pré Moldade (40X40X40) Com Tampa | 1d | 2026-11-10 | 2026-11-10 |  |  | Pedreiro; Servente | 16h | 146 |
| 218 | 1.4.2 | **Elétrica** |  |  |  |  |  |  |  |  |
| 219 | 1.4.2.1 | **Spda** |  |  |  |  |  |  |  |  |
| 220 | 1.4.2.1.1 | Escavação Mecanizada De Vala | 1d | 2026-11-10 | 2026-11-10 |  |  | Servente; Operador De Maquina | 16h | 147 |
| 221 | 1.4.2.1.2 | Lançamento De Cabo De Cobre Nu Em Vala | 2d | 2026-11-10 | 2026-11-11 |  |  | Eletricista; Servente | 32h | 148 |
| 222 | 1.4.2.1.3 | Cravação De Haste De Aterramento E Solda Exotermica | 1d | 2026-11-10 | 2026-11-10 |  |  | Eletricista; Servente | 16h | 149 |
| 223 | 1.4.3 | **Instrumentação** |  |  |  |  |  |  |  |  |
| 224 | 1.4.3.1 | **Instalação De Instrumentos** |  |  |  |  |  |  |  |  |
| 225 | 1.4.3.1.1 | Instalação De Instrumento De Campo De Pequeno/Médio Porte - Células de carga | 7d | 2026-11-10 | 2026-11-18 |  |  | Técnico Intrumentista; Ajudante | 112h | 150 |
| 226 | 2 | **Armazenamento** |  |  |  |  |  |  |  |  |
| 227 | 2.1 | **Silo 01** |  |  |  |  |  |  |  |  |
| 228 | 2.1.1 | **Civil** |  |  |  |  |  |  |  |  |
| 229 | 2.1.1.1 | **Serviços Preliminares** |  |  |  |  |  |  |  |  |
| 230 | 2.1.1.1.1 | Limpeza De Terreno | 250d | 2025-12-01 A | 2026-11-13 |  | 56% | Pedreiro [200%]; Servente [200%] | 8000h | 1 |
| 231 | 2.1.1.1.2 | Locação De Obra | 12d | 2026-11-09 A | 2026-11-24 | 230 | 28% | Carpinteiro [200%]; Servente [200%] | 384h | 2 |

Notes:
- 214: Quantidade: 1.0 un. Produção: 2.0 un/dia por equipe x 1 equipe(s). Duração = arred. p/ cima(1.0 / (2.0 x 1)) = 1 dia(s) útil(eis). Equipe básica por frente: Pedreiro 1, Servente 1. Executado: 0.0 un (0.0%). Origem do índice: Catálogo de Etapas do app Gestão de Obra.
- 216: Quantidade: 7.0 un. Produção: 5.0 un/dia por equipe x 1 equipe(s). Duração = arred. p/ cima(7.0 / (5.0 x 1)) = 2 dia(s) útil(eis). Equipe básica por frente: Eletricista Predial 1, Ajudante Eletricista 1. Executado: 0.0 un (0.0%). Origem do índice: Catálogo de Etapas do app Gestão de Obra.
- 217: Quantidade: 1.0 un. Produção: 4.8 un/dia por equipe x 1 equipe(s). Duração = arred. p/ cima(1.0 / (4.8 x 1)) = 1 dia(s) útil(eis). Equipe básica por frente: Pedreiro 1, Servente 1. Executado: 0.0 un (0.0%). Origem do índice: Catálogo de Etapas do app Gestão de Obra.
- 220: Quantidade: 74.0 m. Produção: 160.0 m/dia por equipe x 1 equipe(s). Duração = arred. p/ cima(74.0 / (160.0 x 1)) = 1 dia(s) útil(eis). Equipe básica por frente: Servente 1, Operador De Maquina 1. Executado: 0.0 m (0.0%). Origem do índice: Catálogo de Etapas do app Gestão de Obra.
- 221: Quantidade: 74.0 m. Produção: 50.0 m/dia por equipe x 1 equipe(s). Duração = arred. p/ cima(74.0 / (50.0 x 1)) = 2 dia(s) útil(eis). Equipe básica por frente: Eletricista 1, Servente 1. Executado: 0.0 m (0.0%). Origem do índice: Catálogo de Etapas do app Gestão de Obra.
- 222: Quantidade: 8.0 un. Produção: 8.0 un/dia por equipe x 1 equipe(s). Duração = arred. p/ cima(8.0 / (8.0 x 1)) = 1 dia(s) útil(eis). Equipe básica por frente: Eletricista 1, Servente 1. Executado: 0.0 un (0.0%). Origem do índice: Catálogo de Etapas do app Gestão de Obra.
- 225: Quantidade: 10.0 un. Produção: 1.6 un/dia por equipe x 1 equipe(s). Duração = arred. p/ cima(10.0 / (1.6 x 1)) = 7 dia(s) útil(eis). Equipe básica por frente: Técnico Intrumentista 1, Ajudante 1. Executado: 0.0 un (0.0%). Origem do índice: Catálogo de Etapas do app Gestão de Obra.
- 230: Quantidade: 900.0 m2. Produção: 50.0 m2/dia por equipe x 2 equipe(s). Duração = arred. p/ cima(900.0 / (50.0 x 2)) = 9 dia(s) útil(eis). Equipe básica por frente: Pedreiro 1, Servente 1. Executado: 500.0 m2 (55.6%). Origem do índice: Catálogo de Etapas do app Gestão de Obra.
- 231: Quantidade: 900.0 m2. Produção: 32.0 m2/dia por equipe x 2 equipe(s). Duração = arred. p/ cima(900.0 / (32.0 x 2)) = 15 dia(s) útil(eis). Equipe básica por frente: Carpinteiro 1, Servente 1. Executado: 250.0 m2 (27.8%). Origem do índice: Catálogo de Etapas do app Gestão de Obra. ATENÇÃO: iniciada fora da sequência — início real anterior ao permitido pela(s) predecessora(s) #1.
